| id | workspaceId | kind | title | description | ownerId | status | priority | startDate | dueDate | progress | nextAction | details | createdBy | createdAt | updatedAt | sourceId |
| --- | --- | --- | --- | --- | --- | --- | --- | --- | --- | --- | --- | --- | --- | --- | --- | --- |
| PMO-XLS-Master Register-APR-01 | pmo | task | [APR-01] Approval request status filter | Filter approval requests across all three states (Pending, Approved, Rejected) so it is obvious where work is stuck — 200 influencers waiting a week signals a bottleneck. | pmo-sheet:Frontend | Under Review | Critical | 2026-09-21 | 2026-09-21 | 100 | Each of the three states filters correctly with accurate counts. | APR-01 APR طلب الموافقة على المؤثر 1 Approval request status filter فلتر لطلب الموافقة بحالاته Pending / Approved / Rejected Filter approval requests across all three states (Pending, Approved, Rejected) so it is obvious where work is stuck — 200 influencers waiting a week signals a bottleneck. DONE Verify & Close P0 S 1 W0 W0 · Delivered — Verify & Close Frontend Approval & Client Sign-off 2026-09-21 2026-09-21 W1 1 [] Each of the three states filters correctly with accurate counts. 100 Each of the three states filters correctly with accurate counts. Master Register APR-01 Frontend | workbook-import | 2026-09-21T00:00:00.000Z | 2026-09-21T00:00:00.000Z | PMO-EXCEL-2026-09-13-v1 |
| PMO-XLS-Master Register-CAMP-01 | pmo | task | [CAMP-01] Client coverage-rejection system (Wrong Coverage) | New 'Wrong Coverage' section on the Admin Campaign Coverage page listing influencers whose coverage the client rejected, plus two new filters: Channel Coverage Status (accepted / rejected) and Influencer Coverage Status (fully Rejected / fully Accepted). | pmo-sheet:Full-stack | Under Review | Critical | 2026-09-21 | 2026-09-21 | 100 | Wrong Coverage section visible to Admin; both coverage-status filters return correct accepted/rejected sets. | CAMP-01 CAMP إدارة الحملات 1 Client coverage-rejection system (Wrong Coverage) نظام واضح لرفض تغطيات المؤثرين من العميل New 'Wrong Coverage' section on the Admin Campaign Coverage page listing influencers whose coverage the client rejected, plus two new filters: Channel Coverage Status (accepted / rejected) and Influencer Coverage Status (fully Rejected / fully Accepted). DONE Verify & Close P0 M 1 W0 W0 · Delivered — Verify & Close Full-stack Field Execution & Coverage 2026-09-21 2026-09-21 W1 1 [] Wrong Coverage section visible to Admin; both coverage-status filters return correct accepted/rejected sets. 100 Wrong Coverage section visible to Admin; both coverage-status filters return correct accepted/rejected sets. Master Register CAMP-01 Full-stack | workbook-import | 2026-09-21T00:00:00.000Z | 2026-09-21T00:00:00.000Z | PMO-EXCEL-2026-09-13-v1 |
| PMO-XLS-Master Register-PLT-04 | pmo | task | [PLT-04] Redirect legacy brand name searches to TryGC | Redirect searches for the old brand name 'Grand Community' to TryGC's current information, so searchers do not land on dead legacy pages and we do not lose inbound demand. | pmo-sheet:DevOps | Under Review | Medium | 2026-09-21 | 2026-09-21 | 100 | Search for the old name surfaces TryGC content in the top results; no dead legacy pages rank. | PLT-04 PLT المنصة والصفحة الرئيسية 4 Redirect legacy brand name searches to TryGC توجيه نتائج البحث عن الاسم القديم Grand Community Redirect searches for the old brand name 'Grand Community' to TryGC's current information, so searchers do not land on dead legacy pages and we do not lose inbound demand. DONE Verify & Close P2 S 1 W0 W0 · Delivered — Verify & Close DevOps Automation, Notifications & Governance 2026-09-21 2026-09-21 W1 1 [] Search for the old name surfaces TryGC content in the top results; no dead legacy pages rank. 100 Search for the old name surfaces TryGC content in the top results; no dead legacy pages rank. Master Register PLT-04 DevOps | workbook-import | 2026-09-21T00:00:00.000Z | 2026-09-21T00:00:00.000Z | PMO-EXCEL-2026-09-13-v1 |
| PMO-XLS-Master Register-TEC-03 | pmo | task | [TEC-03] Auto-refresh Best Media metrics | Continuously refresh Best Media views, comments and likes, because these numbers keep climbing after publication — a reel at 50K views on day one reaches 300K a week later and a frozen figure understates both us and the influencer. | pmo-sheet:Data/BI | Under Review | Critical | 2026-09-21 | 2026-09-21 | 100 | Metrics refresh on a defined schedule and reports reflect current values. | TEC-03 TEC التقني والأتمتة 3 Auto-refresh Best Media metrics تحديث بيانات Best Media أوتوماتيك Continuously refresh Best Media views, comments and likes, because these numbers keep climbing after publication — a reel at 50K views on day one reaches 300K a week later and a frozen figure understates both us and the influencer. DONE Verify & Close P0 L 1 W0 W0 · Delivered — Verify & Close Data/BI Content Capture & Best Media 2026-09-21 2026-09-21 W1 1 [] Metrics refresh on a defined schedule and reports reflect current values. 100 Metrics refresh on a defined schedule and reports reflect current values. Master Register TEC-03 Data/BI | workbook-import | 2026-09-21T00:00:00.000Z | 2026-09-21T00:00:00.000Z | PMO-EXCEL-2026-09-13-v1 |
| PMO-XLS-Master Register-BRD-05 | pmo | task | [BRD-05] Brand-level page size (50 vs 100) | Show at least 50 influencers per page at brand level so the brand can compare a meaningful set at once. | pmo-sheet:Frontend | Under Review | High | 2026-09-22 | 2026-09-22 | 100 | Page size at brand level confirmed and applied consistently. | BRD-05 BRD إدارة البراندات 5 Brand-level page size (50 vs 100) عرض 50 مؤثر على الأقل في كل صفحة عند البراند Show at least 50 influencers per page at brand level so the brand can compare a meaningful set at once. DONE Verify & Close P1 S 1 W0 W0 · Delivered — Verify & Close Frontend Influencer Discovery & Sourcing 2026-09-22 2026-09-22 W1 1 ["INF-11"] Page size at brand level confirmed and applied consistently. Direct conflict with INF-11 (100 per page). The source explicitly asks management to decide which number applies on which screen. 100 Page size at brand level confirmed and applied consistently. Master Register BRD-05 Frontend | workbook-import | 2026-09-21T00:00:00.000Z | 2026-09-21T00:00:00.000Z | PMO-EXCEL-2026-09-13-v1 |
| PMO-XLS-Master Register-REP-11 | pmo | task | [REP-11] Remove Total Influencers from the report | Remove Total Influencers and keep only Achieved, because Total Influencers is the agreed number while Achieved is what actually ran; showing both invites an awkward conversation when the gap is large. | pmo-sheet:Data/BI | Under Review | High | 2026-09-22 | 2026-09-22 | 100 | Total Influencers absent from client-facing reports; Achieved retained. | REP-11 REP التقارير والتحليلات 11 Remove Total Influencers from the report حذف رقم Total Influencers من التقرير Remove Total Influencers and keep only Achieved, because Total Influencers is the agreed number while Achieved is what actually ran; showing both invites an awkward conversation when the gap is large. DONE Verify & Close P1 S 1 W0 W0 · Delivered — Verify & Close Data/BI Reporting & Client Delivery 2026-09-22 2026-09-22 W1 1 [] Total Influencers absent from client-facing reports; Achieved retained. 100 Total Influencers absent from client-facing reports; Achieved retained. Master Register REP-11 Data/BI | workbook-import | 2026-09-21T00:00:00.000Z | 2026-09-21T00:00:00.000Z | PMO-EXCEL-2026-09-13-v1 |
| PMO-XLS-Master Register-CAMP-02 | pmo | task | [CAMP-02] Filter legacy campaigns by country and office | Filter historical campaigns by country and by office. | pmo-sheet:Frontend | Under Review | High | 2026-09-23 | 2026-09-23 | 100 | Country and office filters return accurate legacy campaign sets. | CAMP-02 CAMP إدارة الحملات 2 Filter legacy campaigns by country and office فلترة الحملات القديمة حسب الدولة والمكتب Filter historical campaigns by country and by office. DONE Verify & Close P1 S 1 W0 W0 · Delivered — Verify & Close Frontend Campaign Setup & Booking 2026-09-23 2026-09-23 W1 1 [] Country and office filters return accurate legacy campaign sets. 100 Country and office filters return accurate legacy campaign sets. Master Register CAMP-02 Frontend | workbook-import | 2026-09-21T00:00:00.000Z | 2026-09-21T00:00:00.000Z | PMO-EXCEL-2026-09-13-v1 |
| PMO-XLS-Master Register-INF-21 | pmo | task | [INF-21] Filter by reel views min / max range | Filter by a chosen channel with a minimum and maximum reel-view range so talent can be matched to budget and reach ambition (e.g. Instagram, 50,000–200,000 views). | pmo-sheet:Frontend | Under Review | High | 2026-09-24 | 2026-09-24 | 100 | Channel plus Min/Max returns exactly the influencers inside the range. | INF-21 INF إدارة المؤثرين 21 Filter by reel views min / max range فلترة حسب مشاهدات الريلز بنطاق Min / Max Filter by a chosen channel with a minimum and maximum reel-view range so talent can be matched to budget and reach ambition (e.g. Instagram, 50,000–200,000 views). DONE Verify & Close P1 M 1 W0 W0 · Delivered — Verify & Close Frontend Influencer Discovery & Sourcing 2026-09-24 2026-09-24 W1 1 [] Channel plus Min/Max returns exactly the influencers inside the range. 100 Channel plus Min/Max returns exactly the influencers inside the range. Master Register INF-21 Frontend | workbook-import | 2026-09-21T00:00:00.000Z | 2026-09-21T00:00:00.000Z | PMO-EXCEL-2026-09-13-v1 |
| PMO-XLS-Master Register-INF-25 | pmo | task | [INF-25] Multi-select governorate and city filter | Allow multi-select of governorate and city (e.g. Cairo, Giza and Alexandria together) in one combined result, instead of filtering city by city and merging by hand. | pmo-sheet:Frontend | Under Review | High | 2026-09-25 | 2026-09-25 | 100 | Multi-select returns one merged result set with no duplicates. | INF-25 INF إدارة المؤثرين 25 Multi-select governorate and city filter تحويل فلتر المحافظة والمدينة لاختيار متعدد Allow multi-select of governorate and city (e.g. Cairo, Giza and Alexandria together) in one combined result, instead of filtering city by city and merging by hand. DONE Verify & Close P1 M 1 W0 W0 · Delivered — Verify & Close Frontend Influencer Discovery & Sourcing 2026-09-25 2026-09-25 W1 1 [] Multi-select returns one merged result set with no duplicates. 100 Multi-select returns one merged result set with no duplicates. Master Register INF-25 Frontend | workbook-import | 2026-09-21T00:00:00.000Z | 2026-09-21T00:00:00.000Z | PMO-EXCEL-2026-09-13-v1 |
| PMO-XLS-Master Register-REP-03 | pmo | task | [REP-03] Report filtering by branch and time period | Filter reports by branch and by date range. | pmo-sheet:Frontend | Under Review | High | 2026-09-28 | 2026-09-28 | 100 | Branch and date-range filters combine correctly and re-render all report widgets. | REP-03 REP التقارير والتحليلات 3 Report filtering by branch and time period فلترة في التقرير حسب الفرع والفترة الزمنية Filter reports by branch and by date range. DONE Verify & Close P1 S 1 W0 W0 · Delivered — Verify & Close Frontend Reporting & Client Delivery 2026-09-28 2026-09-28 W2 1 [] Branch and date-range filters combine correctly and re-render all report widgets. 100 Branch and date-range filters combine correctly and re-render all report widgets. Master Register REP-03 Frontend | workbook-import | 2026-09-21T00:00:00.000Z | 2026-09-21T00:00:00.000Z | PMO-EXCEL-2026-09-13-v1 |
| PMO-XLS-Master Register-REP-04 | pmo | task | [REP-04] Governorate and city filter in reports | Filter reports by governorate and city. | pmo-sheet:Frontend | Under Review | High | 2026-09-29 | 2026-09-29 | 100 | Governorate and city filters cascade correctly with the date filter. | REP-04 REP التقارير والتحليلات 4 Governorate and city filter in reports فلتر المحافظة والمدينة في التقرير Filter reports by governorate and city. DONE Verify & Close P1 S 1 W0 W0 · Delivered — Verify & Close Frontend Reporting & Client Delivery 2026-09-29 2026-09-29 W2 1 ["REP-03"] Governorate and city filters cascade correctly with the date filter. 100 Governorate and city filters cascade correctly with the date filter. Master Register REP-04 Frontend | workbook-import | 2026-09-21T00:00:00.000Z | 2026-09-21T00:00:00.000Z | PMO-EXCEL-2026-09-13-v1 |
| PMO-XLS-Master Register-REP-12 | pmo | task | [REP-12] Drill-down on report numbers | Make report figures clickable so a client can open the detail behind any number instead of asking the team for a list. | pmo-sheet:Frontend | Under Review | High | 2026-09-30 | 2026-09-30 | 100 | Every headline figure drills through to the underlying influencer-level detail, filtered to match the number. | REP-12 REP التقارير والتحليلات 12 Drill-down on report numbers جعل الأرقام في التقرير قابلة للدوس Drill-Down Make report figures clickable so a client can open the detail behind any number instead of asking the team for a list. DONE Verify & Close P1 M 1 W0 W0 · Delivered — Verify & Close Frontend Reporting & Client Delivery 2026-09-30 2026-09-30 W2 1 [] Every headline figure drills through to the underlying influencer-level detail, filtered to match the number. 100 Every headline figure drills through to the underlying influencer-level detail, filtered to match the number. Master Register REP-12 Frontend | workbook-import | 2026-09-21T00:00:00.000Z | 2026-09-21T00:00:00.000Z | PMO-EXCEL-2026-09-13-v1 |
| PMO-XLS-Master Register-WAT-03 | pmo | task | [WAT-03] Show influencer campaign status in WhatsApp | Show an influencer's campaign status (Confirmed, Visit, etc.) inside the WhatsApp campaign page, so whoever is messaging knows which conversation to have — visit timing versus invitation. | pmo-sheet:Frontend | Under Review | High | 2026-10-01 | 2026-10-01 | 100 | Campaign status visible next to each contact in the WhatsApp campaign view. | WAT-03 WAT التواصل عن طريق واتساب 3 Show influencer campaign status in WhatsApp عرض حالات المؤثر جوه الحملة في واتساب Show an influencer's campaign status (Confirmed, Visit, etc.) inside the WhatsApp campaign page, so whoever is messaging knows which conversation to have — visit timing versus invitation. DONE Verify & Close P1 S 1 W0 W0 · Delivered — Verify & Close Frontend Automation, Notifications & Governance 2026-10-01 2026-10-01 W2 1 [] Campaign status visible next to each contact in the WhatsApp campaign view. Source flags ambiguity: are the statuses to be shown campaign statuses (Confirmed / Visit) or message statuses (Sent / Replied / Not yet replied)? Clarification required. 100 Campaign status visible next to each contact in the WhatsApp campaign view. Master Register WAT-03 Frontend | workbook-import | 2026-09-21T00:00:00.000Z | 2026-09-21T00:00:00.000Z | PMO-EXCEL-2026-09-13-v1 |
| PMO-XLS-Master Register-INF-24 | pmo | task | [INF-24] Recently Added becomes a date-range filter | Change Recently Added from a fixed last-month window into a proper date filter. | pmo-sheet:Frontend | Under Review | Medium | 2026-10-02 | 2026-10-02 | 100 | Arbitrary date range accepted and applied to the added date. | INF-24 INF إدارة المؤثرين 24 Recently Added becomes a date-range filter تغيير فلتر Recently Added لفلتر بالتاريخ Change Recently Added from a fixed last-month window into a proper date filter. DONE Verify & Close P2 S 1 W0 W0 · Delivered — Verify & Close Frontend Influencer Discovery & Sourcing 2026-10-02 2026-10-02 W2 1 [] Arbitrary date range accepted and applied to the added date. 100 Arbitrary date range accepted and applied to the added date. Master Register INF-24 Frontend | workbook-import | 2026-09-21T00:00:00.000Z | 2026-09-21T00:00:00.000Z | PMO-EXCEL-2026-09-13-v1 |
| PMO-XLS-Master Register-REP-06 | pmo | task | [REP-06] Show campaign count in the consolidated report only | Show the number of campaigns in the consolidated report only, not in single-campaign reports. | pmo-sheet:Frontend | Under Review | Medium | 2026-10-05 | 2026-10-05 | 100 | Campaign count appears in consolidated view and is absent from single-campaign view. | REP-06 REP التقارير والتحليلات 6 Show campaign count in the consolidated report only عرض عدد الحملات في التقرير المجمع فقط Show the number of campaigns in the consolidated report only, not in single-campaign reports. DONE Verify & Close P2 S 1 W0 W0 · Delivered — Verify & Close Frontend Reporting & Client Delivery 2026-10-05 2026-10-05 W3 1 ["REP-05"] Campaign count appears in consolidated view and is absent from single-campaign view. 100 Campaign count appears in consolidated view and is absent from single-campaign view. Master Register REP-06 Frontend | workbook-import | 2026-09-21T00:00:00.000Z | 2026-09-21T00:00:00.000Z | PMO-EXCEL-2026-09-13-v1 |
| PMO-XLS-Master Register-REP-07 | pmo | task | [REP-07] Sort influencers by follower count | Sort influencers by follower count, largest first, in both single-campaign and consolidated reports. | pmo-sheet:Frontend | Under Review | Medium | 2026-10-06 | 2026-10-06 | 100 | Descending follower sort holds in both report types and survives export. | REP-07 REP التقارير والتحليلات 7 Sort influencers by follower count ترتيب المؤثرين في التقرير حسب عدد المتابعين Sort influencers by follower count, largest first, in both single-campaign and consolidated reports. DONE Verify & Close P2 S 1 W0 W0 · Delivered — Verify & Close Frontend Reporting & Client Delivery 2026-10-06 2026-10-06 W3 1 [] Descending follower sort holds in both report types and survives export. 100 Descending follower sort holds in both report types and survives export. Master Register REP-07 Frontend | workbook-import | 2026-09-21T00:00:00.000Z | 2026-09-21T00:00:00.000Z | PMO-EXCEL-2026-09-13-v1 |
| PMO-XLS-Master Register-REP-16 | pmo | task | [REP-16] Tooltip explaining each report tab | Tooltip explaining what each report tab means, so clients stop asking the team what internal terms like 'Achieved' mean. | pmo-sheet:Frontend | Under Review | Medium | 2026-10-07 | 2026-10-07 | 100 | Every tab has a hover tooltip with a plain-language definition. | REP-16 REP التقارير والتحليلات 16 Tooltip explaining each report tab عرض معنى التاب عند الوقوف عليه Tooltip explaining what each report tab means, so clients stop asking the team what internal terms like 'Achieved' mean. DONE Verify & Close P2 S 1 W0 W0 · Delivered — Verify & Close Frontend Reporting & Client Delivery 2026-10-07 2026-10-07 W3 1 [] Every tab has a hover tooltip with a plain-language definition. 100 Every tab has a hover tooltip with a plain-language definition. Master Register REP-16 Frontend | workbook-import | 2026-09-21T00:00:00.000Z | 2026-09-21T00:00:00.000Z | PMO-EXCEL-2026-09-13-v1 |
| PMO-XLS-Master Register-INF-09 | pmo | task | [INF-09] Auto-update influencer city from last visit | Update the registered city from the most recent visit city when the influencer has no city on record or the registered city differs from the last visit — stale city data wastes a campaign slot and everyone's time. | pmo-sheet:Backend | Backlog | Critical | 2026-09-21 | 2026-09-23 | 0 | City updated on both trigger conditions; every change written to an audit trail. | INF-09 INF إدارة المؤثرين 9 Auto-update influencer city from last visit تحديث مدينة المؤثر المسجّلة بناءً على آخر زيارة Update the registered city from the most recent visit city when the influencer has no city on record or the registered city differs from the last visit — stale city data wastes a campaign slot and everyone's time. NEW Not Started P0 M 3 W1 W1 · Foundation: Data, Taxonomy & Platform Backend Brand Onboarding & Categorisation 2026-09-21 2026-09-23 W1 3 [] City updated on both trigger conditions; every change written to an audit trail. 0 City updated on both trigger conditions; every change written to an audit trail. Master Register INF-09 Backend | workbook-import | 2026-09-21T00:00:00.000Z | 2026-09-21T00:00:00.000Z | PMO-EXCEL-2026-09-13-v1 |
| PMO-XLS-Master Register-INF-27 | pmo | task | [INF-27] Add SWARM as a supported platform | Support SWARM as a social platform everywhere platforms appear — the create-influencer screen, the influencer card and reports — so work on new platforms can be tracked and reported. | pmo-sheet:Full-stack | Backlog | High | 2026-09-22 | 2026-09-24 | 0 | SWARM selectable on create, visible on the card and included in reporting. | INF-27 INF إدارة المؤثرين 27 Add SWARM as a supported platform إضافة منصة SWARM كمنصة مدعومة Support SWARM as a social platform everywhere platforms appear — the create-influencer screen, the influencer card and reports — so work on new platforms can be tracked and reported. NEW Not Started P1 M 3 W1 W1 · Foundation: Data, Taxonomy & Platform Full-stack Brand Onboarding & Categorisation 2026-09-22 2026-09-24 W1 3 [] SWARM selectable on create, visible on the card and included in reporting. 0 SWARM selectable on create, visible on the card and included in reporting. Master Register INF-27 Full-stack | workbook-import | 2026-09-21T00:00:00.000Z | 2026-09-21T00:00:00.000Z | PMO-EXCEL-2026-09-13-v1 |
| PMO-XLS-Master Register-BRD-02 | pmo | task | [BRD-02] Category on every brand, including retroactive cleanup | Assign a category to every brand we have worked with, applied retroactively across historical data (restaurant = F&B, clothing store = Fashion, clinic = Health). This taxonomy underpins several other requirements. | pmo-sheet:Data/BI | Backlog | Critical | 2026-09-23 | 2026-09-29 | 0 | 100% of brands categorised, including historical ones, against an agreed category list. | BRD-02 BRD إدارة البراندات 2 Category on every brand, including retroactive cleanup إضافة فئة Category لكل البراندات اللي اشتغلنا معاها Assign a category to every brand we have worked with, applied retroactively across historical data (restaurant = F&B, clothing store = Fashion, clinic = Health). This taxonomy underpins several other requirements. NEW Not Started P0 L 5 W1 W1 · Foundation: Data, Taxonomy & Platform Data/BI Brand Onboarding & Categorisation 2026-09-23 2026-09-29 W1 5 [] 100% of brands categorised, including historical ones, against an agreed category list. 0 100% of brands categorised, including historical ones, against an agreed category list. Master Register BRD-02 Data/BI | workbook-import | 2026-09-21T00:00:00.000Z | 2026-09-21T00:00:00.000Z | PMO-EXCEL-2026-09-13-v1 |
| PMO-XLS-Master Register-INF-10 | pmo | task | [INF-10] Multiple countries per influencer | Allow multi-select of countries per influencer so people who genuinely live between two countries (e.g. Egypt and the UAE) appear in both markets' results. | pmo-sheet:Backend | Backlog | High | 2026-09-24 | 2026-09-28 | 0 | Multi-country saved and honoured by every country filter and campaign query. | INF-10 INF إدارة المؤثرين 10 Multiple countries per influencer السماح بأكثر من دولة للمؤثر الواحد (Multi-Select) Allow multi-select of countries per influencer so people who genuinely live between two countries (e.g. Egypt and the UAE) appear in both markets' results. NEW Not Started P1 M 3 W1 W1 · Foundation: Data, Taxonomy & Platform Backend Brand Onboarding & Categorisation 2026-09-24 2026-09-28 W1 3 [] Multi-country saved and honoured by every country filter and campaign query. 0 Multi-country saved and honoured by every country filter and campaign query. Master Register INF-10 Backend | workbook-import | 2026-09-21T00:00:00.000Z | 2026-09-21T00:00:00.000Z | PMO-EXCEL-2026-09-13-v1 |
| PMO-XLS-Master Register-INF-20 | pmo | task | [INF-20] Average Views metric | Add Average Views next to Total Followers on the influencer page and in the Wishlist, with per-channel averages on hover, because follower count is a misleading number — 1M followers at 10K views signals a disengaged or purchased audience, while 90K followers at 60K views is a find. | pmo-sheet:Data/BI | Backlog | Critical | 2026-09-30 | 2026-10-06 | 0 | Average Views shown at influencer and per-channel level, matching the reporting definition. | INF-20 INF إدارة المؤثرين 20 Average Views metric إضافة مؤشر متوسط المشاهدات Average Views Add Average Views next to Total Followers on the influencer page and in the Wishlist, with per-channel averages on hover, because follower count is a misleading number — 1M followers at 10K views signals a disengaged or purchased audience, while 90K followers at 60K views is a find. NEW Not Started P0 L 5 W1 W1 · Foundation: Data, Taxonomy & Platform Data/BI Influencer Discovery & Sourcing 2026-09-30 2026-10-06 W2 5 ["REP-01"] Average Views shown at influencer and per-channel level, matching the reporting definition. 0 Average Views shown at influencer and per-channel level, matching the reporting definition. Master Register INF-20 Data/BI | workbook-import | 2026-09-21T00:00:00.000Z | 2026-09-21T00:00:00.000Z | PMO-EXCEL-2026-09-13-v1 |
| PMO-XLS-Master Register-REP-01 | pmo | task | [REP-01] Remove metrics with no real data source | Drop Impressions and Reach from reports because they have no genuine data source, and give Admin a switch to bring them back if they become available later. | pmo-sheet:Data/BI | Backlog | Critical | 2026-10-07 | 2026-10-09 | 0 | Impressions and Reach absent from all client-facing reports; Admin toggle restores them without a release. | REP-01 REP التقارير والتحليلات 1 Remove metrics with no real data source إزالة الأرقام التي ليس لها مصدر بيانات حقيقي Drop Impressions and Reach from reports because they have no genuine data source, and give Admin a switch to bring them back if they become available later. NEW Not Started P0 M 3 W1 W1 · Foundation: Data, Taxonomy & Platform Data/BI Reporting & Client Delivery 2026-10-07 2026-10-09 W3 3 ["BRD-02"] Impressions and Reach absent from all client-facing reports; Admin toggle restores them without a release. 0 Impressions and Reach absent from all client-facing reports; Admin toggle restores them without a release. Master Register REP-01 Data/BI | workbook-import | 2026-09-21T00:00:00.000Z | 2026-09-21T00:00:00.000Z | PMO-EXCEL-2026-09-13-v1 |
| PMO-XLS-Master Register-INF-01 | pmo | task | [INF-01] Full-screen Look-Alike window | Look-Alike currently shows only 3 rows; add an option to expand it full screen so a large candidate set can be compared at once. | pmo-sheet:Frontend | Backlog | High | 2026-10-12 | 2026-10-14 | 0 | Full-screen mode available, scroll position preserved on exit, results unchanged. | INF-01 INF إدارة المؤثرين 1 Full-screen Look-Alike window تكبير نافذة Look-Alike على الشاشة كلها Look-Alike currently shows only 3 rows; add an option to expand it full screen so a large candidate set can be compared at once. NEW Not Started P1 M 3 W2 W2 · Influencer Discovery & Management Core Frontend Influencer Discovery & Sourcing 2026-10-12 2026-10-14 W4 3 [] Full-screen mode available, scroll position preserved on exit, results unchanged. 0 Full-screen mode available, scroll position preserved on exit, results unchanged. Master Register INF-01 Frontend | workbook-import | 2026-09-21T00:00:00.000Z | 2026-09-21T00:00:00.000Z | PMO-EXCEL-2026-09-13-v1 |
| PMO-XLS-Master Register-INF-03 | pmo | task | [INF-03] Chained filtering without reloading all data | Each new filter must apply to the result set produced by the previous filter instead of reloading the full dataset — filter Egypt > Cairo > Zamalek > female, get 40 results, then sort by followers and only those 40 are re-sorted. | pmo-sheet:Backend | Backlog | Critical | 2026-10-12 | 2026-10-16 | 0 | Filter state accumulates; sorting and further filters never reset the result set to the full population. | INF-03 INF إدارة المؤثرين 3 Chained filtering without reloading all data تشغيل الفلتر على نتيجة الفلتر الذي قبله Each new filter must apply to the result set produced by the previous filter instead of reloading the full dataset — filter Egypt > Cairo > Zamalek > female, get 40 results, then sort by followers and only those 40 are re-sorted. NEW Not Started P0 L 5 W2 W2 · Influencer Discovery & Management Core Backend Influencer Discovery & Sourcing 2026-10-12 2026-10-16 W4 5 ["INF-11"] Filter state accumulates; sorting and further filters never reset the result set to the full population. 0 Filter state accumulates; sorting and further filters never reset the result set to the full population. Master Register INF-03 Backend | workbook-import | 2026-09-21T00:00:00.000Z | 2026-09-21T00:00:00.000Z | PMO-EXCEL-2026-09-13-v1 |
| PMO-XLS-Master Register-INF-06 | pmo | task | [INF-06] Filter influencers by campaign with per-person status | On the influencers page, selecting a campaign lists everyone who took part with their individual status (visited, produced coverage, missed the appointment), so a proven roster can be rebuilt quickly. | pmo-sheet:Full-stack | Backlog | Critical | 2026-10-12 | 2026-10-16 | 0 | Campaign filter returns the participant roster with visited / coverage / missed flags per person. | INF-06 INF إدارة المؤثرين 6 Filter influencers by campaign with per-person status فلتر حسب الحملة في صفحة المؤثرين مع حالة كل مؤثر On the influencers page, selecting a campaign lists everyone who took part with their individual status (visited, produced coverage, missed the appointment), so a proven roster can be rebuilt quickly. NEW Not Started P0 L 5 W2 W2 · Influencer Discovery & Management Core Full-stack Campaign Setup & Booking 2026-10-12 2026-10-16 W4 5 ["INF-03"] Campaign filter returns the participant roster with visited / coverage / missed flags per person. 0 Campaign filter returns the participant roster with visited / coverage / missed flags per person. Master Register INF-06 Full-stack | workbook-import | 2026-09-21T00:00:00.000Z | 2026-09-21T00:00:00.000Z | PMO-EXCEL-2026-09-13-v1 |
| PMO-XLS-Master Register-INF-02 | pmo | task | [INF-02] Last visit date on the influencer card | Show the influencer's last visit date directly on the card so staff do not have to open the History window dozens of times a day. | pmo-sheet:Frontend | Backlog | High | 2026-10-15 | 2026-10-15 | 0 | Last visit date visible on every card; blank state handled for never-visited influencers. | INF-02 INF إدارة المؤثرين 2 Last visit date on the influencer card عرض تاريخ آخر زيارة على كارت المؤثر Show the influencer's last visit date directly on the card so staff do not have to open the History window dozens of times a day. NEW Not Started P1 S 1 W2 W2 · Influencer Discovery & Management Core Frontend Influencer Discovery & Sourcing 2026-10-15 2026-10-15 W4 1 [] Last visit date visible on every card; blank state handled for never-visited influencers. 0 Last visit date visible on every card; blank state handled for never-visited influencers. Master Register INF-02 Frontend | workbook-import | 2026-09-21T00:00:00.000Z | 2026-09-21T00:00:00.000Z | PMO-EXCEL-2026-09-13-v1 |
| PMO-XLS-Master Register-INF-11 | pmo | task | [INF-11] Pagination instead of Load More | Replace Load More with real pagination at 100 influencers per page with numbered pages, because Load More degrades as the page grows and a refresh loses your position. | pmo-sheet:Frontend | Backlog | High | 2026-10-16 | 2026-10-20 | 0 | Numbered pages, 100 per page, deep-linkable page state, no progressive slowdown. | INF-11 INF إدارة المؤثرين 11 Pagination instead of Load More تغيير صفحة المؤثرين من Load More لنظام صفحات Replace Load More with real pagination at 100 influencers per page with numbered pages, because Load More degrades as the page grows and a refresh loses your position. NEW Not Started P1 M 3 W2 W2 · Influencer Discovery & Management Core Frontend Influencer Discovery & Sourcing 2026-10-16 2026-10-20 W4 3 ["INF-03"] Numbered pages, 100 per page, deep-linkable page state, no progressive slowdown. Conflicts with BRD-05, which asks for 50 per page at brand level. Management must decide which number applies on which screen. 0 Numbered pages, 100 per page, deep-linkable page state, no progressive slowdown. Master Register INF-11 Frontend | workbook-import | 2026-09-21T00:00:00.000Z | 2026-09-21T00:00:00.000Z | PMO-EXCEL-2026-09-13-v1 |
| PMO-XLS-Master Register-INF-05 | pmo | task | [INF-05] Filter influencers who produced coverage | Add a coverage filter on the influencer page to isolate people who actually executed and published, not just registered or visited. | pmo-sheet:Backend | Backlog | High | 2026-10-19 | 2026-10-21 | 0 | Coverage filter returns only influencers with at least one verified coverage record. | INF-05 INF إدارة المؤثرين 5 Filter influencers who produced coverage فلتر المؤثرين الذين عملوا تغطية Coverage Add a coverage filter on the influencer page to isolate people who actually executed and published, not just registered or visited. NEW Not Started P1 M 3 W2 W2 · Influencer Discovery & Management Core Backend Field Execution & Coverage 2026-10-19 2026-10-21 W5 3 [] Coverage filter returns only influencers with at least one verified coverage record. 0 Coverage filter returns only influencers with at least one verified coverage record. Master Register INF-05 Backend | workbook-import | 2026-09-21T00:00:00.000Z | 2026-09-21T00:00:00.000Z | PMO-EXCEL-2026-09-13-v1 |
| PMO-XLS-Master Register-INF-13 | pmo | task | [INF-13] Standalone CONTENT section | Promote content out of the Top Coverage filter into a standalone CONTENT section on the influencers page, filterable by content type (Reels, Post, Photo, Story) and by audio treatment (Voice-over, Music, Silent). | pmo-sheet:Full-stack | Backlog | Critical | 2026-10-19 | 2026-10-23 | 0 | CONTENT section live with type and audio filters; 'reels with voice-over' returns the expected set. | INF-13 INF إدارة المؤثرين 13 Standalone CONTENT section قسم مستقل جديد اسمه CONTENT Promote content out of the Top Coverage filter into a standalone CONTENT section on the influencers page, filterable by content type (Reels, Post, Photo, Story) and by audio treatment (Voice-over, Music, Silent). NEW Not Started P0 L 5 W2 W2 · Influencer Discovery & Management Core Full-stack Content Capture & Best Media 2026-10-19 2026-10-23 W5 5 ["INF-08"] CONTENT section live with type and audio filters; 'reels with voice-over' returns the expected set. 0 CONTENT section live with type and audio filters; 'reels with voice-over' returns the expected set. Master Register INF-13 Full-stack | workbook-import | 2026-09-21T00:00:00.000Z | 2026-09-21T00:00:00.000Z | PMO-EXCEL-2026-09-13-v1 |
| PMO-XLS-Master Register-INF-15 | pmo | task | [INF-15] Disable video autoplay | Stop videos autoplaying in listings — simultaneous playback means sudden loud audio, a heavy page and wasted bandwidth, and it is embarrassing in a shared office. | pmo-sheet:Frontend | Backlog | High | 2026-10-21 | 2026-10-21 | 0 | No video plays without an explicit user action anywhere in the product. | INF-15 INF إدارة المؤثرين 15 Disable video autoplay إيقاف التشغيل التلقائي للفيديوهات Stop videos autoplaying in listings — simultaneous playback means sudden loud audio, a heavy page and wasted bandwidth, and it is embarrassing in a shared office. NEW Not Started P1 S 1 W2 W2 · Influencer Discovery & Management Core Frontend Influencer Discovery & Sourcing 2026-10-21 2026-10-21 W5 1 [] No video plays without an explicit user action anywhere in the product. 0 No video plays without an explicit user action anywhere in the product. Master Register INF-15 Frontend | workbook-import | 2026-09-21T00:00:00.000Z | 2026-09-21T00:00:00.000Z | PMO-EXCEL-2026-09-13-v1 |
| PMO-XLS-Master Register-CAMP-04 | pmo | task | [CAMP-04] Brief printing reminder for delivery campaigns | Reminder notification prompting the team to print the brief for delivery campaigns. | pmo-sheet:Frontend | Backlog | Medium | 2026-10-22 | 2026-10-22 | 0 | Reminder fires for delivery campaigns only and is dismissible; no reminder for non-delivery campaigns. | CAMP-04 CAMP إدارة الحملات 4 Brief printing reminder for delivery campaigns رسالة تذكير بطباعة البريف في حملات الديليفري Reminder notification prompting the team to print the brief for delivery campaigns. NEW Not Started P2 S 1 W2 W2 · Influencer Discovery & Management Core Frontend Campaign Setup & Booking 2026-10-22 2026-10-22 W5 1 [] Reminder fires for delivery campaigns only and is dismissible; no reminder for non-delivery campaigns. 0 Reminder fires for delivery campaigns only and is dismissible; no reminder for non-delivery campaigns. Master Register CAMP-04 Frontend | workbook-import | 2026-09-21T00:00:00.000Z | 2026-09-21T00:00:00.000Z | PMO-EXCEL-2026-09-13-v1 |
| PMO-XLS-Master Register-INF-17 | pmo | task | [INF-17] Chunked influencer transfer | When a bulk transfer exceeds the server limit, split it into background batches transparently — select 500 with a limit of 100 and the system sends five batches while the user simply sees all 500 moved. | pmo-sheet:Backend | Backlog | High | 2026-10-22 | 2026-10-26 | 0 | Transfers of 500+ complete without error and every record lands exactly once. | INF-17 INF إدارة المؤثرين 17 Chunked influencer transfer تحسين التعامل مع نقل المؤثرين When a bulk transfer exceeds the server limit, split it into background batches transparently — select 500 with a limit of 100 and the system sends five batches while the user simply sees all 500 moved. NEW Not Started P1 M 3 W2 W2 · Influencer Discovery & Management Core Backend Influencer Discovery & Sourcing 2026-10-22 2026-10-26 W5 3 [] Transfers of 500+ complete without error and every record lands exactly once. 0 Transfers of 500+ complete without error and every record lands exactly once. Master Register INF-17 Backend | workbook-import | 2026-09-21T00:00:00.000Z | 2026-09-21T00:00:00.000Z | PMO-EXCEL-2026-09-13-v1 |
| PMO-XLS-Master Register-INF-04 | pmo | task | [INF-04] Visited filter in the main Favorite / Dislike menu | Surface the Visited filter directly in the main status menu next to Favorite and Dislike, since it is currently buried two levels deep. | pmo-sheet:Frontend | Backlog | Medium | 2026-10-23 | 2026-10-23 | 0 | Visited selectable in one click from the main status menu. | INF-04 INF إدارة المؤثرين 4 Visited filter in the main Favorite / Dislike menu إظهار فلتر Visited في قائمة Favorite / Dislike Surface the Visited filter directly in the main status menu next to Favorite and Dislike, since it is currently buried two levels deep. NEW Not Started P2 S 1 W2 W2 · Influencer Discovery & Management Core Frontend Influencer Discovery & Sourcing 2026-10-23 2026-10-23 W5 1 [] Visited selectable in one click from the main status menu. 0 Visited selectable in one click from the main status menu. Master Register INF-04 Frontend | workbook-import | 2026-09-21T00:00:00.000Z | 2026-09-21T00:00:00.000Z | PMO-EXCEL-2026-09-13-v1 |
| PMO-XLS-Master Register-CAMP-03 | pmo | task | [CAMP-03] Track multiple campaigns without a per-campaign secret code | Allow several campaigns to be tracked in parallel without requiring a separate secret code for each campaign. | pmo-sheet:Full-stack | Backlog | High | 2026-10-26 | 2026-10-28 | 0 | Two or more campaigns tracked concurrently from one session with no secret-code prompt. | CAMP-03 CAMP إدارة الحملات 3 Track multiple campaigns without a per-campaign secret code متابعة أكثر من حملة من غير كود سري لكل حملة Allow several campaigns to be tracked in parallel without requiring a separate secret code for each campaign. NEW Not Started P1 M 3 W2 W2 · Influencer Discovery & Management Core Full-stack Campaign Setup & Booking 2026-10-26 2026-10-28 W6 3 [] Two or more campaigns tracked concurrently from one session with no secret-code prompt. 0 Two or more campaigns tracked concurrently from one session with no secret-code prompt. Master Register CAMP-03 Full-stack | workbook-import | 2026-09-21T00:00:00.000Z | 2026-09-21T00:00:00.000Z | PMO-EXCEL-2026-09-13-v1 |
| PMO-XLS-Master Register-INF-16 | pmo | task | [INF-16] Reels and stories counts on the card | Show the reels count and stories count on the influencer card. | pmo-sheet:Frontend | Backlog | Medium | 2026-10-26 | 2026-10-26 | 0 | Both counts shown per channel and matching the underlying records. | INF-16 INF إدارة المؤثرين 16 Reels and stories counts on the card عرض عدد الريلز والستوريهات على كارت المؤثر Show the reels count and stories count on the influencer card. NEW Not Started P2 S 1 W2 W2 · Influencer Discovery & Management Core Frontend Influencer Discovery & Sourcing 2026-10-26 2026-10-26 W6 1 [] Both counts shown per channel and matching the underlying records. 0 Both counts shown per channel and matching the underlying records. Master Register INF-16 Frontend | workbook-import | 2026-09-21T00:00:00.000Z | 2026-09-21T00:00:00.000Z | PMO-EXCEL-2026-09-13-v1 |
| PMO-XLS-Master Register-INF-22 | pmo | task | [INF-22] Branch filter in Campaign Influencer Details | Filter influencers who visited one specific branch, so a campaign for a given location can start from people who already know that place. | pmo-sheet:Backend | Backlog | High | 2026-10-27 | 2026-10-29 | 0 | Branch filter returns per-branch visit history correctly. | INF-22 INF إدارة المؤثرين 22 Branch filter in Campaign Influencer Details إضافة فلتر الفرع في Campaign Influencer Details Filter influencers who visited one specific branch, so a campaign for a given location can start from people who already know that place. NEW Not Started P1 M 3 W2 W2 · Influencer Discovery & Management Core Backend Field Execution & Coverage 2026-10-27 2026-10-29 W6 3 [] Branch filter returns per-branch visit history correctly. 0 Branch filter returns per-branch visit history correctly. Master Register INF-22 Backend | workbook-import | 2026-09-21T00:00:00.000Z | 2026-09-21T00:00:00.000Z | PMO-EXCEL-2026-09-13-v1 |
| PMO-XLS-Master Register-CAMP-05 | pmo | task | [CAMP-05] Alert when re-adding a previously rejected influencer | Warning alert when an influencer who was rejected before is added to a campaign. | pmo-sheet:Full-stack | Blocked | High | 2026-10-29 | 2026-10-29 | 0 | Alert blocks or warns on add, shows the prior rejection reason and date, and can be overridden by an authorised role. | CAMP-05 CAMP إدارة الحملات 5 Alert when re-adding a previously rejected influencer تحذير Alert عند إضافة مؤثرين اترفضوا قبل كده للحملة Warning alert when an influencer who was rejected before is added to a campaign. TBC Blocked - Clarification P1 S 1 W2 W2 · Influencer Discovery & Management Core Full-stack Approval & Client Sign-off 2026-10-29 2026-10-29 W6 1 [] Alert blocks or warns on add, shows the prior rejection reason and date, and can be overridden by an authorised role. Source document leaves this open. Confirm: does 'rejected before' mean client rejection only or internal rejection too, and what lookback window applies? 0 Alert blocks or warns on add, shows the prior rejection reason and date, and can be overridden by an authorised role. Master Register CAMP-05 Full-stack | workbook-import | 2026-09-21T00:00:00.000Z | 2026-09-21T00:00:00.000Z | PMO-EXCEL-2026-09-13-v1 |
| PMO-XLS-Master Register-INF-07 | pmo | task | [INF-07] Brand-specific visit / coverage tag on the card | Tag the influencer card to show whether that person specifically visited or covered the selected brand, since one influencer has history with many brands. | pmo-sheet:Full-stack | Backlog | High | 2026-10-30 | 2026-11-03 | 0 | When filtered by brand, cards show a correct brand-specific visit and coverage tag. | INF-07 INF إدارة المؤثرين 7 Brand-specific visit / coverage tag on the card تاج على كارت المؤثر يوضّح زيارة أو تغطية للبراند ده Tag the influencer card to show whether that person specifically visited or covered the selected brand, since one influencer has history with many brands. NEW Not Started P1 M 3 W2 W2 · Influencer Discovery & Management Core Full-stack Content Capture & Best Media 2026-10-30 2026-11-03 W6 3 ["INF-06"] When filtered by brand, cards show a correct brand-specific visit and coverage tag. 0 When filtered by brand, cards show a correct brand-specific visit and coverage tag. Master Register INF-07 Full-stack | workbook-import | 2026-09-21T00:00:00.000Z | 2026-09-21T00:00:00.000Z | PMO-EXCEL-2026-09-13-v1 |
| PMO-XLS-Master Register-INF-19 | pmo | task | [INF-19] Not Active influencer filter | Filter for Not Active influencers so fresh faces can be sourced and campaigns stop cycling through the same people. | pmo-sheet:Backend | Backlog | Medium | 2026-10-30 | 2026-10-30 | 0 | Not Active filter returns influencers with no campaign history. | INF-19 INF إدارة المؤثرين 19 Not Active influencer filter فلتر للمؤثرين غير النشطين Not Active Filter for Not Active influencers so fresh faces can be sourced and campaigns stop cycling through the same people. NEW Not Started P2 S 1 W2 W2 · Influencer Discovery & Management Core Backend Influencer Discovery & Sourcing 2026-10-30 2026-10-30 W6 1 ["INF-14"] Not Active filter returns influencers with no campaign history. 0 Not Active filter returns influencers with no campaign history. Master Register INF-19 Backend | workbook-import | 2026-09-21T00:00:00.000Z | 2026-09-21T00:00:00.000Z | PMO-EXCEL-2026-09-13-v1 |
| PMO-XLS-Master Register-INF-08 | pmo | task | [INF-08] Split Top Coverage / Top Posts into Top and Recent | Split Top Coverage into Top Coverage and Recent Coverage, and Top Posts into Top Posts and Recent Posts, grouping both under Coverage and Posts. Best and latest are different questions: a two-year-old reel with a million views is Top, but the last five reels at 3K views is the current reality. | pmo-sheet:Full-stack | Backlog | High | 2026-11-04 | 2026-11-06 | 0 | Four distinct lists available with clearly defined Top and Recent windows. | INF-08 INF إدارة المؤثرين 8 Split Top Coverage / Top Posts into Top and Recent تقسيم Top Coverage و Top Posts إلى Top و Recent Split Top Coverage into Top Coverage and Recent Coverage, and Top Posts into Top Posts and Recent Posts, grouping both under Coverage and Posts. Best and latest are different questions: a two-year-old reel with a million views is Top, but the last five reels at 3K views is the current reality. NEW Not Started P1 M 3 W2 W2 · Influencer Discovery & Management Core Full-stack Content Capture & Best Media 2026-11-04 2026-11-06 W7 3 [] Four distinct lists available with clearly defined Top and Recent windows. 0 Four distinct lists available with clearly defined Top and Recent windows. Master Register INF-08 Full-stack | workbook-import | 2026-09-21T00:00:00.000Z | 2026-09-21T00:00:00.000Z | PMO-EXCEL-2026-09-13-v1 |
| PMO-XLS-Master Register-INF-14 | pmo | task | [INF-14] ACTIVE and NOT ACTIVE statuses | Add ACTIVE and NOT ACTIVE to the influencer status dropdown alongside Favorite and Dislike, so previously-used and never-used influencers can both be found. | pmo-sheet:Full-stack | Backlog | High | 2026-11-09 | 2026-11-09 | 0 | Both statuses persist, filter and appear on the card. | INF-14 INF إدارة المؤثرين 14 ACTIVE and NOT ACTIVE statuses إضافة خيارين ACTIVE و NOT ACTIVE في قائمة الحالة Add ACTIVE and NOT ACTIVE to the influencer status dropdown alongside Favorite and Dislike, so previously-used and never-used influencers can both be found. NEW Not Started P1 S 1 W2 W2 · Influencer Discovery & Management Core Full-stack Influencer Discovery & Sourcing 2026-11-09 2026-11-09 W8 1 [] Both statuses persist, filter and appear on the card. 0 Both statuses persist, filter and appear on the card. Master Register INF-14 Full-stack | workbook-import | 2026-09-21T00:00:00.000Z | 2026-09-21T00:00:00.000Z | PMO-EXCEL-2026-09-13-v1 |
| PMO-XLS-Master Register-INF-18 | pmo | task | [INF-18] Influencer statuses inside campaigns filter | Expose in-campaign influencer statuses in the Campaign Influencer Details filter, including a 'Rejected by Client' option that returns only client-rejected people. | pmo-sheet:Full-stack | Backlog | High | 2026-11-10 | 2026-11-12 | 0 | Status filter returns correct sets for every status including Rejected by Client. | INF-18 INF إدارة المؤثرين 18 Influencer statuses inside campaigns filter عرض حالات المؤثر جوه الحملات في فلتر صفحة المؤثرين Expose in-campaign influencer statuses in the Campaign Influencer Details filter, including a 'Rejected by Client' option that returns only client-rejected people. NEW Not Started P1 M 3 W2 W2 · Influencer Discovery & Management Core Full-stack Approval & Client Sign-off 2026-11-10 2026-11-12 W8 3 ["CAMP-01"] Status filter returns correct sets for every status including Rejected by Client. 0 Status filter returns correct sets for every status including Rejected by Client. Master Register INF-18 Full-stack | workbook-import | 2026-09-21T00:00:00.000Z | 2026-09-21T00:00:00.000Z | PMO-EXCEL-2026-09-13-v1 |
| PMO-XLS-Master Register-REP-05 | pmo | task | [REP-05] Consolidated report across all client campaigns | A single consolidated report that aggregates every campaign belonging to one client. | pmo-sheet:Full-stack | Backlog | Critical | 2026-11-23 | 2026-11-27 | 0 | One report covers all campaigns for a client; per-campaign subtotals reconcile to the consolidated total. | REP-05 REP التقارير والتحليلات 5 Consolidated report across all client campaigns تقرير للعميل يجمع كل حملاته في مكان واحد A single consolidated report that aggregates every campaign belonging to one client. NEW Not Started P0 L 5 W3 W3 · Reporting & Client Deliverables Full-stack Reporting & Client Delivery 2026-11-23 2026-11-27 W10 5 ["REP-01"] One report covers all campaigns for a client; per-campaign subtotals reconcile to the consolidated total. 0 One report covers all campaigns for a client; per-campaign subtotals reconcile to the consolidated total. Master Register REP-05 Full-stack | workbook-import | 2026-09-21T00:00:00.000Z | 2026-09-21T00:00:00.000Z | PMO-EXCEL-2026-09-13-v1 |
| PMO-XLS-Master Register-REP-08 | pmo | task | [REP-08] Per-campaign Achieved breakdown chart | Chart in the consolidated report that splits Achieved per campaign for every metric, so the aggregate cannot hide a weak campaign (e.g. 90 total = 50+40 or 85+5, a very different picture). | pmo-sheet:Data/BI | Backlog | Critical | 2026-11-23 | 2026-11-27 | 0 | Every consolidated chart (views, likes, channels) is segmented by campaign; values reconcile to the total. | REP-08 REP التقارير والتحليلات 8 Per-campaign Achieved breakdown chart رسم بياني يقسّم رقم Achieved على كل حملة Chart in the consolidated report that splits Achieved per campaign for every metric, so the aggregate cannot hide a weak campaign (e.g. 90 total = 50+40 or 85+5, a very different picture). NEW Not Started P0 L 5 W3 W3 · Reporting & Client Deliverables Data/BI Reporting & Client Delivery 2026-11-23 2026-11-27 W10 5 ["REP-05","REP-10"] Every consolidated chart (views, likes, channels) is segmented by campaign; values reconcile to the total. 0 Every consolidated chart (views, likes, channels) is segmented by campaign; values reconcile to the total. Master Register REP-08 Data/BI | workbook-import | 2026-09-21T00:00:00.000Z | 2026-09-21T00:00:00.000Z | PMO-EXCEL-2026-09-13-v1 |
| PMO-XLS-Master Register-REP-13 | pmo | task | [REP-13] Improve Best Media number presentation | Redesign how Best Media figures are presented — crowded, small or unordered numbers do not get read, and this is the section that shows the client the best content produced. | pmo-sheet:UI/UX | Backlog | High | 2026-11-23 | 2026-11-25 | 0 | Best Media metrics readable at a glance with clear hierarchy and no truncation. | REP-13 REP التقارير والتحليلات 13 Improve Best Media number presentation تحسين طريقة عرض الأرقام في قسم Best Media Redesign how Best Media figures are presented — crowded, small or unordered numbers do not get read, and this is the section that shows the client the best content produced. NEW Not Started P1 M 3 W3 W3 · Reporting & Client Deliverables UI/UX Content Capture & Best Media 2026-11-23 2026-11-25 W10 3 [] Best Media metrics readable at a glance with clear hierarchy and no truncation. 0 Best Media metrics readable at a glance with clear hierarchy and no truncation. Master Register REP-13 UI/UX | workbook-import | 2026-09-21T00:00:00.000Z | 2026-09-21T00:00:00.000Z | PMO-EXCEL-2026-09-13-v1 |
| PMO-XLS-Master Register-REP-15 | pmo | task | [REP-15] Exact value on hover for abbreviated numbers | Show the exact figure on hover, because abbreviations like 1.4K are fine visually but clients need the precise number for their own reporting. | pmo-sheet:Frontend | Backlog | Medium | 2026-11-23 | 2026-11-23 | 0 | Hover reveals the full unrounded value for every abbreviated figure. | REP-15 REP التقارير والتحليلات 15 Exact value on hover for abbreviated numbers عرض الرقم الدقيق عند الوقوف على التاب Show the exact figure on hover, because abbreviations like 1.4K are fine visually but clients need the precise number for their own reporting. NEW Not Started P2 S 1 W3 W3 · Reporting & Client Deliverables Frontend Reporting & Client Delivery 2026-11-23 2026-11-23 W10 1 ["REP-14"] Hover reveals the full unrounded value for every abbreviated figure. 0 Hover reveals the full unrounded value for every abbreviated figure. Master Register REP-15 Frontend | workbook-import | 2026-09-21T00:00:00.000Z | 2026-09-21T00:00:00.000Z | PMO-EXCEL-2026-09-13-v1 |
| PMO-XLS-Master Register-REP-19 | pmo | task | [REP-19] Influencer count per channel in the report | Show how many influencers ran on each channel, so the brand can see how the campaign spread across platforms and adjust the next plan. | pmo-sheet:Frontend | Backlog | Medium | 2026-11-24 | 2026-11-24 | 0 | Per-channel influencer counts shown and reconciling to the campaign total. | REP-19 REP التقارير والتحليلات 19 Influencer count per channel in the report عرض عدد المؤثرين على كل قناة في التقرير Show how many influencers ran on each channel, so the brand can see how the campaign spread across platforms and adjust the next plan. NEW Not Started P2 S 1 W3 W3 · Reporting & Client Deliverables Frontend Reporting & Client Delivery 2026-11-24 2026-11-24 W10 1 ["REP-05"] Per-channel influencer counts shown and reconciling to the campaign total. 0 Per-channel influencer counts shown and reconciling to the campaign total. Master Register REP-19 Frontend | workbook-import | 2026-09-21T00:00:00.000Z | 2026-09-21T00:00:00.000Z | PMO-EXCEL-2026-09-13-v1 |
| PMO-XLS-Master Register-REP-21 | pmo | task | [REP-21] Additional report design templates | Offer more design templates for the exported report so each client sees something close to their own visual identity. | pmo-sheet:UI/UX | Backlog | Medium | 2026-11-26 | 2026-12-02 | 0 | At least four selectable templates, each rendering correctly across PDF, Excel and PPT export. | REP-21 REP التقارير والتحليلات 21 Additional report design templates خيارات تصميم وقوالب Templates أكتر للتقرير Offer more design templates for the exported report so each client sees something close to their own visual identity. NEW Not Started P2 L 5 W3 W3 · Reporting & Client Deliverables UI/UX Reporting & Client Delivery 2026-11-26 2026-12-02 W10 5 ["REP-10"] At least four selectable templates, each rendering correctly across PDF, Excel and PPT export. 0 At least four selectable templates, each rendering correctly across PDF, Excel and PPT export. Master Register REP-21 UI/UX | workbook-import | 2026-09-21T00:00:00.000Z | 2026-09-21T00:00:00.000Z | PMO-EXCEL-2026-09-13-v1 |
| PMO-XLS-Master Register-REP-10 | pmo | task | [REP-10] Export reports to Excel and PowerPoint | Add Excel and PowerPoint export alongside the locked PDF, so clients can edit figures and drop them into their own board decks. | pmo-sheet:Full-stack | Backlog | Critical | 2026-11-30 | 2026-12-04 | 0 | Excel and PPT exports contain the same figures as the PDF and open without repair prompts. | REP-10 REP التقارير والتحليلات 10 Export reports to Excel and PowerPoint تصدير التقرير على شكل إكسل وباوربوينت Add Excel and PowerPoint export alongside the locked PDF, so clients can edit figures and drop them into their own board decks. NEW Not Started P0 L 5 W3 W3 · Reporting & Client Deliverables Full-stack Reporting & Client Delivery 2026-11-30 2026-12-04 W11 5 [] Excel and PPT exports contain the same figures as the PDF and open without repair prompts. 0 Excel and PPT exports contain the same figures as the PDF and open without repair prompts. Master Register REP-10 Full-stack | workbook-import | 2026-09-21T00:00:00.000Z | 2026-09-21T00:00:00.000Z | PMO-EXCEL-2026-09-13-v1 |
| PMO-XLS-Master Register-REP-17 | pmo | task | [REP-17] Brand-level breakdown in the company report | Break the company report down by brand, because one company can hold several brands and management wants to see what each brand delivered. | pmo-sheet:Data/BI | Backlog | High | 2026-11-30 | 2026-12-04 | 0 | Brand subtotals present and reconciling to the company total. | REP-17 REP التقارير والتحليلات 17 Brand-level breakdown in the company report إضافة تفاصيل البراندات في تقرير الشركة Break the company report down by brand, because one company can hold several brands and management wants to see what each brand delivered. NEW Not Started P1 L 5 W3 W3 · Reporting & Client Deliverables Data/BI Reporting & Client Delivery 2026-11-30 2026-12-04 W11 5 ["BRD-02","REP-05"] Brand subtotals present and reconciling to the company total. 0 Brand subtotals present and reconciling to the company total. Master Register REP-17 Data/BI | workbook-import | 2026-09-21T00:00:00.000Z | 2026-09-21T00:00:00.000Z | PMO-EXCEL-2026-09-13-v1 |
| PMO-XLS-Master Register-REP-02 | pmo | task | [REP-02] TikTok Spark Code in client reports | Add TikTok Spark Code data into client reports. | pmo-sheet:Data/BI | Blocked | Medium | 2026-12-07 | 2026-12-09 | 0 | Spark Code metrics appear per campaign with a documented source and refresh cadence. | REP-02 REP التقارير والتحليلات 2 TikTok Spark Code in client reports إضافة TikTok Spark Code لتقارير العملاء Add TikTok Spark Code data into client reports. TBC Blocked - Clarification P2 M 3 W3 W3 · Reporting & Client Deliverables Data/BI Reporting & Client Delivery 2026-12-07 2026-12-09 W12 3 ["REP-05"] Spark Code metrics appear per campaign with a documented source and refresh cadence. Source document flags this '??'. Confirm API access, authorisation model and whether TikTok grants Spark Code data to our account. 0 Spark Code metrics appear per campaign with a documented source and refresh cadence. Master Register REP-02 Data/BI | workbook-import | 2026-09-21T00:00:00.000Z | 2026-09-21T00:00:00.000Z | PMO-EXCEL-2026-09-13-v1 |
| PMO-XLS-Master Register-REP-09 | pmo | task | [REP-09] Consolidated report export options | Export the consolidated report either as one file per campaign or as one combined file, so a single campaign can go to one owner while a combined pack goes to senior management. | pmo-sheet:Full-stack | Backlog | High | 2026-12-07 | 2026-12-09 | 0 | Both export modes available and produce complete, correctly named files. | REP-09 REP التقارير والتحليلات 9 Consolidated report export options تصدير التقرير المجمع بخيارين Export the consolidated report either as one file per campaign or as one combined file, so a single campaign can go to one owner while a combined pack goes to senior management. NEW Not Started P1 M 3 W3 W3 · Reporting & Client Deliverables Full-stack Reporting & Client Delivery 2026-12-07 2026-12-09 W12 3 ["REP-05"] Both export modes available and produce complete, correctly named files. 0 Both export modes available and produce complete, correctly named files. Master Register REP-09 Full-stack | workbook-import | 2026-09-21T00:00:00.000Z | 2026-09-21T00:00:00.000Z | PMO-EXCEL-2026-09-13-v1 |
| PMO-XLS-Master Register-REP-14 | pmo | task | [REP-14] Top Influencers section (top 20) | New Top Influencers section listing the 20 strongest influencers by follower count, so the big names land before the client reaches the detail. | pmo-sheet:Full-stack | Backlog | High | 2026-12-10 | 2026-12-14 | 0 | Exactly the top 20 by followers appear, with ties handled deterministically. | REP-14 REP التقارير والتحليلات 14 Top Influencers section (top 20) قسم جديد Top Influencers لأقوى 20 مؤثر New Top Influencers section listing the 20 strongest influencers by follower count, so the big names land before the client reaches the detail. NEW Not Started P1 M 3 W3 W3 · Reporting & Client Deliverables Full-stack Reporting & Client Delivery 2026-12-10 2026-12-14 W12 3 ["REP-05"] Exactly the top 20 by followers appear, with ties handled deterministically. 0 Exactly the top 20 by followers appear, with ties handled deterministically. Master Register REP-14 Full-stack | workbook-import | 2026-09-21T00:00:00.000Z | 2026-09-21T00:00:00.000Z | PMO-EXCEL-2026-09-13-v1 |
| PMO-XLS-Master Register-REP-18 | pmo | task | [REP-18] Best Media ranked by likes and shares | Give Best Media Views / Likes / Shares tabs that re-rank content on the selected metric, because views alone are a weak measure — a low-view post that people shared is worth more to the brand. | pmo-sheet:Full-stack | Backlog | High | 2026-12-15 | 2026-12-17 | 0 | Three tabs available; switching re-ranks the list on that metric with no page reload. | REP-18 REP التقارير والتحليلات 18 Best Media ranked by likes and shares Best Media مرتبة حسب اللايكات والمشاركات Give Best Media Views / Likes / Shares tabs that re-rank content on the selected metric, because views alone are a weak measure — a low-view post that people shared is worth more to the brand. NEW Not Started P1 M 3 W3 W3 · Reporting & Client Deliverables Full-stack Content Capture & Best Media 2026-12-15 2026-12-17 W13 3 [] Three tabs available; switching re-ranks the list on that metric with no page reload. 0 Three tabs available; switching re-ranks the list on that metric with no page reload. Master Register REP-18 Full-stack | workbook-import | 2026-09-21T00:00:00.000Z | 2026-09-21T00:00:00.000Z | PMO-EXCEL-2026-09-13-v1 |
| PMO-XLS-Master Register-REP-20 | pmo | task | [REP-20] Recommendations, Challenges and Next Steps in exported PPT | Add Recommendations, Challenges & Solutions and Next Steps sections to the exported PowerPoint so the report is more than raw numbers — this is the part that earns the renewal. | pmo-sheet:Full-stack | Backlog | High | 2026-12-18 | 2026-12-22 | 0 | Three new slide sections present in the PPT export with editable placeholder content. | REP-20 REP التقارير والتحليلات 20 Recommendations, Challenges and Next Steps in exported PPT أقسام جديدة في تقرير الباوربوينت: توصيات وتحديات وحلول وخطوات جاية Add Recommendations, Challenges & Solutions and Next Steps sections to the exported PowerPoint so the report is more than raw numbers — this is the part that earns the renewal. NEW Not Started P1 M 3 W3 W3 · Reporting & Client Deliverables Full-stack Reporting & Client Delivery 2026-12-18 2026-12-22 W13 3 ["REP-10"] Three new slide sections present in the PPT export with editable placeholder content. 0 Three new slide sections present in the PPT export with editable placeholder content. Master Register REP-20 Full-stack | workbook-import | 2026-09-21T00:00:00.000Z | 2026-09-21T00:00:00.000Z | PMO-EXCEL-2026-09-13-v1 |
| PMO-XLS-Master Register-APR-03 | pmo | task | [APR-03] Add-result statistics summary | After adding influencers to an approval request, show a numeric summary of how many were added, how many rejected and why, so a batch of 100 does not silently lose 40. | pmo-sheet:Frontend | Backlog | Medium | 2026-12-14 | 2026-12-14 | 0 | Summary appears immediately after every bulk add, with per-reason breakdown. | APR-03 APR طلب الموافقة على المؤثر 3 Add-result statistics summary عرض إحصائيات وقت الإضافة لطلب الموافقة After adding influencers to an approval request, show a numeric summary of how many were added, how many rejected and why, so a batch of 100 does not silently lose 40. NEW Not Started P2 S 1 W4 W4 · Lists, Approval & Community Workflow Frontend Approval & Client Sign-off 2026-12-14 2026-12-14 W13 1 ["APR-02"] Summary appears immediately after every bulk add, with per-reason breakdown. 0 Summary appears immediately after every bulk add, with per-reason breakdown. Master Register APR-03 Frontend | workbook-import | 2026-09-21T00:00:00.000Z | 2026-09-21T00:00:00.000Z | PMO-EXCEL-2026-09-13-v1 |
| PMO-XLS-Master Register-APR-06 | pmo | task | [APR-06] Reset button for approval request | Allow an influencer's approval state to be returned to 'request for approval' when someone acted in error, instead of leaving them rejected forever or requiring database intervention. | pmo-sheet:Backend | Backlog | Critical | 2026-12-14 | 2026-12-16 | 0 | Reset restores Pending, records the actor and prior state in the log. | APR-06 APR طلب الموافقة على المؤثر 6 Reset button for approval request إضافة زرار إعادة تعيين Reset لطلب الموافقة Allow an influencer's approval state to be returned to 'request for approval' when someone acted in error, instead of leaving them rejected forever or requiring database intervention. NEW Not Started P0 M 3 W4 W4 · Lists, Approval & Community Workflow Backend Approval & Client Sign-off 2026-12-14 2026-12-16 W13 3 [] Reset restores Pending, records the actor and prior state in the log. 0 Reset restores Pending, records the actor and prior state in the log. Master Register APR-06 Backend | workbook-import | 2026-09-21T00:00:00.000Z | 2026-09-21T00:00:00.000Z | PMO-EXCEL-2026-09-13-v1 |
| PMO-XLS-Master Register-WSH-02 | pmo | task | [WSH-02] Suggest influencers from similar brands | When building a list for a brand, suggest influencers connected to similar brands — building a list for a new coffee brand should surface everyone who previously visited Starbucks. | pmo-sheet:Data/BI | Backlog | High | 2026-12-14 | 2026-12-18 | 0 | Similar-brand suggestions appear with an accept/reject step and a relevance explanation. | WSH-02 WSH إدارة قوائم الاختيار 2 Suggest influencers from similar brands اقتراح مؤثرين من براندات شبيهة وقت عمل القوائم When building a list for a brand, suggest influencers connected to similar brands — building a list for a new coffee brand should surface everyone who previously visited Starbucks. NEW Not Started P1 L 5 W4 W4 · Lists, Approval & Community Workflow Data/BI List Building (Wishlist) 2026-12-14 2026-12-18 W13 5 ["BRD-02"] Similar-brand suggestions appear with an accept/reject step and a relevance explanation. 0 Similar-brand suggestions appear with an accept/reject step and a relevance explanation. Master Register WSH-02 Data/BI | workbook-import | 2026-09-21T00:00:00.000Z | 2026-09-21T00:00:00.000Z | PMO-EXCEL-2026-09-13-v1 |
| PMO-XLS-Master Register-APR-09 | pmo | task | [APR-09] Approval card matches the influencer card options | Give the approval card the same three view options as the influencer card so the interface is consistent and staff are not slowed down by a different layout. | pmo-sheet:Frontend | Backlog | Medium | 2026-12-15 | 2026-12-15 | 0 | All three view options available and switching preserves the current selection. | APR-09 APR طلب الموافقة على المؤثر 9 Approval card matches the influencer card options كارت طلب الموافقة بنفس خيارات عرض كارت المؤثر Give the approval card the same three view options as the influencer card so the interface is consistent and staff are not slowed down by a different layout. NEW Not Started P2 S 1 W4 W4 · Lists, Approval & Community Workflow Frontend Approval & Client Sign-off 2026-12-15 2026-12-15 W13 1 [] All three view options available and switching preserves the current selection. 0 All three view options available and switching preserves the current selection. Master Register APR-09 Frontend | workbook-import | 2026-09-21T00:00:00.000Z | 2026-09-21T00:00:00.000Z | PMO-EXCEL-2026-09-13-v1 |
| PMO-XLS-Master Register-WSH-04 | pmo | task | [WSH-04] Show group counts when adding influencers | When adding influencers to a Wishlist group, show how many are already in the group, how many are being added and the resulting total, so the decision is made with the numbers in view. | pmo-sheet:Frontend | Backlog | Medium | 2026-12-16 | 2026-12-16 | 0 | Pre-add confirmation shows existing, adding and new total with an accurate count. | WSH-04 WSH إدارة قوائم الاختيار 4 Show group counts when adding influencers عرض أعداد المؤثرين على مجموعات الـ Wishlist وقت الإضافة When adding influencers to a Wishlist group, show how many are already in the group, how many are being added and the resulting total, so the decision is made with the numbers in view. NEW Not Started P2 S 1 W4 W4 · Lists, Approval & Community Workflow Frontend List Building (Wishlist) 2026-12-16 2026-12-16 W13 1 [] Pre-add confirmation shows existing, adding and new total with an accurate count. 0 Pre-add confirmation shows existing, adding and new total with an accurate count. Master Register WSH-04 Frontend | workbook-import | 2026-09-21T00:00:00.000Z | 2026-09-21T00:00:00.000Z | PMO-EXCEL-2026-09-13-v1 |
| PMO-XLS-Master Register-WSH-01 | pmo | task | [WSH-01] EXCLUDE applies to all data | Let the EXCLUDE option apply to the whole influencer database as well as to Favorites, so an influencer who caused a problem with a brand can be excluded everywhere, not just from one list. | pmo-sheet:Backend | Backlog | Critical | 2026-12-17 | 2026-12-21 | 0 | Two scope options (Favorites only / all data) with the excluded set honoured by every search. | WSH-01 WSH إدارة قوائم الاختيار 1 EXCLUDE applies to all data فلتر EXCLUDE يشتغل على كل البيانات Let the EXCLUDE option apply to the whole influencer database as well as to Favorites, so an influencer who caused a problem with a brand can be excluded everywhere, not just from one list. NEW Not Started P0 M 3 W4 W4 · Lists, Approval & Community Workflow Backend List Building (Wishlist) 2026-12-17 2026-12-21 W13 3 [] Two scope options (Favorites only / all data) with the excluded set honoured by every search. 0 Two scope options (Favorites only / all data) with the excluded set honoured by every search. Master Register WSH-01 Backend | workbook-import | 2026-09-21T00:00:00.000Z | 2026-09-21T00:00:00.000Z | PMO-EXCEL-2026-09-13-v1 |
| PMO-XLS-Master Register-WSH-06 | pmo | task | [WSH-06] Look-Alike for the Approved List | Add Look-Alike sourcing from the brand's Approved List, since the approved list is the clearest definition of the influencer type that brand likes, reducing selection effort and rejection rate. | pmo-sheet:Data/BI | Backlog | High | 2026-12-21 | 2026-12-25 | 0 | Look-Alike from approved lists returns relevant candidates with a similarity basis shown. | WSH-06 WSH إدارة قوائم الاختيار 6 Look-Alike for the Approved List إضافة خاصية Look-Alike لقائمة المؤثرين الموافق عليهم Add Look-Alike sourcing from the brand's Approved List, since the approved list is the clearest definition of the influencer type that brand likes, reducing selection effort and rejection rate. NEW Not Started P1 L 5 W4 W4 · Lists, Approval & Community Workflow Data/BI List Building (Wishlist) 2026-12-21 2026-12-25 W14 5 ["BRD-02","WSH-02"] Look-Alike from approved lists returns relevant candidates with a similarity basis shown. 0 Look-Alike from approved lists returns relevant candidates with a similarity basis shown. Master Register WSH-06 Data/BI | workbook-import | 2026-09-21T00:00:00.000Z | 2026-09-21T00:00:00.000Z | PMO-EXCEL-2026-09-13-v1 |
| PMO-XLS-Master Register-APR-04 | pmo | task | [APR-04] Export approval requests | Add export to the approval request screen with two modes: export everything, or export one status only (e.g. Approved) to send to the coordination team. | pmo-sheet:Backend | Backlog | High | 2026-12-22 | 2026-12-24 | 0 | Both export modes available; status-filtered export contains only that status. | APR-04 APR طلب الموافقة على المؤثر 4 Export approval requests إضافة تصدير لطلب الموافقة Add export to the approval request screen with two modes: export everything, or export one status only (e.g. Approved) to send to the coordination team. NEW Not Started P1 M 3 W4 W4 · Lists, Approval & Community Workflow Backend Approval & Client Sign-off 2026-12-22 2026-12-24 W14 3 [] Both export modes available; status-filtered export contains only that status. 0 Both export modes available; status-filtered export contains only that status. Master Register APR-04 Backend | workbook-import | 2026-09-21T00:00:00.000Z | 2026-09-21T00:00:00.000Z | PMO-EXCEL-2026-09-13-v1 |
| PMO-XLS-Master Register-APR-02 | pmo | task | [APR-02] Internal rejection filter | Add a filter for influencers we rejected internally, distinct from client rejection — a client rejection means poor brand fit, an internal one means a quality or commitment problem, and the two change future decisions differently. | pmo-sheet:Full-stack | Backlog | High | 2026-12-23 | 2026-12-25 | 0 | Internal rejection distinguishable from client rejection, recording the stage and the team that rejected. | APR-02 APR طلب الموافقة على المؤثر 2 Internal rejection filter فلتر للمؤثرين الذين اترفضوا من عندنا (رفض داخلي) Add a filter for influencers we rejected internally, distinct from client rejection — a client rejection means poor brand fit, an internal one means a quality or commitment problem, and the two change future decisions differently. NEW Not Started P1 M 3 W4 W4 · Lists, Approval & Community Workflow Full-stack Approval & Client Sign-off 2026-12-23 2026-12-25 W14 3 ["APR-01"] Internal rejection distinguishable from client rejection, recording the stage and the team that rejected. Source asks explicitly: at which stage and by which team is an internal rejection recorded? The filter cannot be built until that taxonomy is agreed. 0 Internal rejection distinguishable from client rejection, recording the stage and the team that rejected. Master Register APR-02 Full-stack | workbook-import | 2026-09-21T00:00:00.000Z | 2026-09-21T00:00:00.000Z | PMO-EXCEL-2026-09-13-v1 |
| PMO-XLS-Master Register-APR-07 | pmo | task | [APR-07] Admin reset options for approval and campaign states | Give Admin granular resets across approval requests and their linked campaign states: Request for Approval to Pending, and Approved or Rejected back to Request for Approval. | pmo-sheet:Backend | Backlog | High | 2026-12-25 | 2026-12-29 | 0 | All four transitions available to Admin only and fully audit-logged. | APR-07 APR طلب الموافقة على المؤثر 7 Admin reset options for approval and campaign states خيارات إعادة التعيين لطلب الموافقة وحالات الحملة (للأدمن) Give Admin granular resets across approval requests and their linked campaign states: Request for Approval to Pending, and Approved or Rejected back to Request for Approval. NEW Not Started P1 M 3 W4 W4 · Lists, Approval & Community Workflow Backend Approval & Client Sign-off 2026-12-25 2026-12-29 W14 3 ["APR-06"] All four transitions available to Admin only and fully audit-logged. 0 All four transitions available to Admin only and fully audit-logged. Master Register APR-07 Backend | workbook-import | 2026-09-21T00:00:00.000Z | 2026-09-21T00:00:00.000Z | PMO-EXCEL-2026-09-13-v1 |
| PMO-XLS-Master Register-APR-05 | pmo | task | [APR-05] Movement log with date, platform and category filters | Log every approval movement — approve, reject, add — with filters by date, platform and category, for accountability: if an influencer was rejected in error, it must be possible to see who did it and when. | pmo-sheet:Full-stack | Backlog | High | 2026-12-28 | 2027-01-01 | 0 | Immutable log covering all movements with working date, platform and category filters. | APR-05 APR طلب الموافقة على المؤثر 5 Movement log with date, platform and category filters إضافة سجل Logs لكل الحركات في طلب الموافقة Log every approval movement — approve, reject, add — with filters by date, platform and category, for accountability: if an influencer was rejected in error, it must be possible to see who did it and when. NEW Not Started P1 L 5 W4 W4 · Lists, Approval & Community Workflow Full-stack Approval & Client Sign-off 2026-12-28 2027-01-01 W15 5 ["APR-06"] Immutable log covering all movements with working date, platform and category filters. 0 Immutable log covering all movements with working date, platform and category filters. Master Register APR-05 Full-stack | workbook-import | 2026-09-21T00:00:00.000Z | 2026-09-21T00:00:00.000Z | PMO-EXCEL-2026-09-13-v1 |
| PMO-XLS-Master Register-WSH-03 | pmo | task | [WSH-03] Improved campaign columns in the Wishlist export | Improve how campaigns appear in the Wishlist Excel export, offering 'Export With Last Active Campaign' and 'Export With Campaign'. | pmo-sheet:Backend | Backlog | High | 2026-12-30 | 2027-01-01 | 0 | Both export variants produce correctly populated campaign columns. | WSH-03 WSH إدارة قوائم الاختيار 3 Improved campaign columns in the Wishlist export تحسين عرض الحملات في ملف الإكسل المصدَّر من الـ Wishlist Improve how campaigns appear in the Wishlist Excel export, offering 'Export With Last Active Campaign' and 'Export With Campaign'. NEW Not Started P1 M 3 W4 W4 · Lists, Approval & Community Workflow Backend List Building (Wishlist) 2026-12-30 2027-01-01 W15 3 ["WSH-05"] Both export variants produce correctly populated campaign columns. 0 Both export variants produce correctly populated campaign columns. Master Register WSH-03 Backend | workbook-import | 2026-09-21T00:00:00.000Z | 2026-09-21T00:00:00.000Z | PMO-EXCEL-2026-09-13-v1 |
| PMO-XLS-Master Register-APR-08 | pmo | task | [APR-08] Standalone section for influencers approved in previous campaigns | Show influencers already approved in previous campaigns in their own section, because that is the fastest route to a new campaign — the brand already said yes, so no fresh approval cycle is needed. | pmo-sheet:Full-stack | Backlog | High | 2027-01-04 | 2027-01-06 | 0 | Section lists previously approved influencers, filterable by brand and campaign. | APR-08 APR طلب الموافقة على المؤثر 8 Standalone section for influencers approved in previous campaigns قسم مستقل للموافق عليهم في الحملات السابقة Show influencers already approved in previous campaigns in their own section, because that is the fastest route to a new campaign — the brand already said yes, so no fresh approval cycle is needed. NEW Not Started P1 M 3 W4 W4 · Lists, Approval & Community Workflow Full-stack Approval & Client Sign-off 2027-01-04 2027-01-06 W16 3 ["APR-01"] Section lists previously approved influencers, filterable by brand and campaign. 0 Section lists previously approved influencers, filterable by brand and campaign. Master Register APR-08 Full-stack | workbook-import | 2026-09-21T00:00:00.000Z | 2026-09-21T00:00:00.000Z | PMO-EXCEL-2026-09-13-v1 |
| PMO-XLS-Master Register-WSH-07 | pmo | task | [WSH-07] Export rejected influencers from Wishlist import | On Wishlist import at admin level, show which influencers were rejected and why (e.g. Dislike) and allow exporting them — upload 300, 260 land, and the remaining 40 must be identified and actioned before they are silently lost. | pmo-sheet:Backend | Backlog | High | 2027-01-04 | 2027-01-06 | 0 | Import summary reports added vs rejected counts; rejected rows export with a per-row reason. | WSH-07 WSH إدارة قوائم الاختيار 7 Export rejected influencers from Wishlist import تصدير المؤثرين المرفوضين من استيراد الـ Wishlist On Wishlist import at admin level, show which influencers were rejected and why (e.g. Dislike) and allow exporting them — upload 300, 260 land, and the remaining 40 must be identified and actioned before they are silently lost. NEW Not Started P1 M 3 W4 W4 · Lists, Approval & Community Workflow Backend List Building (Wishlist) 2027-01-04 2027-01-06 W16 3 [] Import summary reports added vs rejected counts; rejected rows export with a per-row reason. 0 Import summary reports added vs rejected counts; rejected rows export with a per-row reason. Master Register WSH-07 Backend | workbook-import | 2026-09-21T00:00:00.000Z | 2026-09-21T00:00:00.000Z | PMO-EXCEL-2026-09-13-v1 |

| id | workspaceId | kind | title | description | ownerId | status | priority | startDate | dueDate | progress | nextAction | details | createdBy | createdAt | updatedAt | sourceId |
| --- | --- | --- | --- | --- | --- | --- | --- | --- | --- | --- | --- | --- | --- | --- | --- | --- |
| PMO-XLS-Master Register-COM-01 | pmo | task | [COM-01] Community team can add new influencers | Let the Community team create new influencers, with the record routed to 'request for approval' rather than straight into campaigns, and log who created it so a good or bad source can be traced. | pmo-sheet:Full-stack | Backlog | High | 2027-01-07 | 2027-01-11 | 0 | Community-created influencers land in Pending approval, with creator identity recorded and reportable. | COM-01 COM فريق الكوميونيتي 1 Community team can add new influencers إضافة مؤثر عن طريق فريق الكوميونيتي Let the Community team create new influencers, with the record routed to 'request for approval' rather than straight into campaigns, and log who created it so a good or bad source can be traced. NEW Not Started P1 M 3 W4 W4 · Lists, Approval & Community Workflow Full-stack Influencer Discovery & Sourcing 2027-01-07 2027-01-11 W16 3 ["APR-01"] Community-created influencers land in Pending approval, with creator identity recorded and reportable. 0 Community-created influencers land in Pending approval, with creator identity recorded and reportable. Master Register COM-01 Full-stack | workbook-import | 2026-09-21T00:00:00.000Z | 2026-09-21T00:00:00.000Z | PMO-EXCEL-2026-09-13-v1 |
| PMO-XLS-Master Register-WSH-05 | pmo | task | [WSH-05] Campaign history information in the Wishlist | Show the number and names of active and previous campaigns in the Wishlist, matching the influencer page exactly ('3 active campaigns, 7 previous') so users do not have to open two screens and compare by hand. | pmo-sheet:Full-stack | Backlog | High | 2027-01-12 | 2027-01-14 | 0 | Wishlist campaign counts and names match the influencer page for the same person. | WSH-05 WSH إدارة قوائم الاختيار 5 Campaign history information in the Wishlist إضافة معلومات التاريخ للـ Wishlist Show the number and names of active and previous campaigns in the Wishlist, matching the influencer page exactly ('3 active campaigns, 7 previous') so users do not have to open two screens and compare by hand. NEW Not Started P1 M 3 W4 W4 · Lists, Approval & Community Workflow Full-stack List Building (Wishlist) 2027-01-12 2027-01-14 W17 3 [] Wishlist campaign counts and names match the influencer page for the same person. 0 Wishlist campaign counts and names match the influencer page for the same person. Master Register WSH-05 Full-stack | workbook-import | 2026-09-21T00:00:00.000Z | 2026-09-21T00:00:00.000Z | PMO-EXCEL-2026-09-13-v1 |
| PMO-XLS-Master Register-ADM-01 | pmo | task | [ADM-01] Unify the influencer card on Scanner approvals | Make the influencer card in Scanner approval requests identical to the one on the influencers page, because two layouts for the same information slow people down and add errors — especially in fast field use. | pmo-sheet:Frontend | Backlog | High | 2027-01-11 | 2027-01-13 | 0 | Scanner approval card matches the influencer page card field for field. | ADM-01 ADM الأدمن والاسكانر 1 Unify the influencer card on Scanner approvals توحيد شكل كارت المؤثر في طلب الموافقة على الاسكانر Make the influencer card in Scanner approval requests identical to the one on the influencers page, because two layouts for the same information slow people down and add errors — especially in fast field use. NEW Not Started P1 M 3 W5 W5 · Brand, Platform & Field Operations Frontend Field Execution & Coverage 2027-01-11 2027-01-13 W17 3 [] Scanner approval card matches the influencer page card field for field. 0 Scanner approval card matches the influencer page card field for field. Master Register ADM-01 Frontend | workbook-import | 2026-09-21T00:00:00.000Z | 2026-09-21T00:00:00.000Z | PMO-EXCEL-2026-09-13-v1 |
| PMO-XLS-Master Register-BRD-03 | pmo | task | [BRD-03] Branch filter alongside brand history filter | Add a branch filter to Brand History on the influencers page, showing who visited a specific branch, because a mall branch and an Alexandria branch reach different people. | pmo-sheet:Backend | Backlog | High | 2027-01-11 | 2027-01-13 | 0 | Brand history can be narrowed to a single branch with accurate results. | BRD-03 BRD إدارة البراندات 3 Branch filter alongside brand history filter إضافة فلتر الفرع مع فلتر تاريخ البراند Add a branch filter to Brand History on the influencers page, showing who visited a specific branch, because a mall branch and an Alexandria branch reach different people. NEW Not Started P1 M 3 W5 W5 · Brand, Platform & Field Operations Backend Field Execution & Coverage 2027-01-11 2027-01-13 W17 3 ["BRD-01"] Brand history can be narrowed to a single branch with accurate results. 0 Brand history can be narrowed to a single branch with accurate results. Master Register BRD-03 Backend | workbook-import | 2026-09-21T00:00:00.000Z | 2026-09-21T00:00:00.000Z | PMO-EXCEL-2026-09-13-v1 |
| PMO-XLS-Master Register-PLT-01 | pmo | task | [PLT-01] Refresh Confidence & Global content | Update the headlines, figures and descriptions in Confidence & Global, which is what builds a visitor's trust — stale numbers imply a company that has stalled (e.g. it still says 3 countries when we now operate in 7). | pmo-sheet:Product/BA | Backlog | High | 2027-01-11 | 2027-01-11 | 0 | All figures and copy verified current with a named owner and a review cadence. | PLT-01 PLT المنصة والصفحة الرئيسية 1 Refresh Confidence & Global content تحديث المحتوى في قسم Confidence & Global Update the headlines, figures and descriptions in Confidence & Global, which is what builds a visitor's trust — stale numbers imply a company that has stalled (e.g. it still says 3 countries when we now operate in 7). NEW Not Started P1 S 1 W5 W5 · Brand, Platform & Field Operations Product/BA Brand Onboarding & Categorisation 2027-01-11 2027-01-11 W17 1 [] All figures and copy verified current with a named owner and a review cadence. 0 All figures and copy verified current with a named owner and a review cadence. Master Register PLT-01 Product/BA | workbook-import | 2026-09-21T00:00:00.000Z | 2026-09-21T00:00:00.000Z | PMO-EXCEL-2026-09-13-v1 |
| PMO-XLS-Master Register-PLT-02 | pmo | task | [PLT-02] Replace social media icons in the Hero section | Replace the social media icons used in the Hero section of the homepage (UI/UX change). | pmo-sheet:UI/UX | Backlog | Medium | 2027-01-11 | 2027-01-11 | 0 | New icons render crisply at all breakpoints and link to the correct profiles. | PLT-02 PLT المنصة والصفحة الرئيسية 2 Replace social media icons in the Hero section تغيير صور أيقونات السوشيال ميديا في قسم الهيرو Replace the social media icons used in the Hero section of the homepage (UI/UX change). NEW Not Started P2 S 1 W5 W5 · Brand, Platform & Field Operations UI/UX Brand Onboarding & Categorisation 2027-01-11 2027-01-11 W17 1 [] New icons render crisply at all breakpoints and link to the correct profiles. 0 New icons render crisply at all breakpoints and link to the correct profiles. Master Register PLT-02 UI/UX | workbook-import | 2026-09-21T00:00:00.000Z | 2026-09-21T00:00:00.000Z | PMO-EXCEL-2026-09-13-v1 |
| PMO-XLS-Master Register-ADM-03 | pmo | task | [ADM-03] Status tabs on the Scanner Approved page | Show status tabs with counts and a per-influencer status mark on the Scanner Approved page, so field staff can see at a glance how many confirmed, how many actually attended and how many are outstanding. | pmo-sheet:Frontend | Backlog | High | 2027-01-14 | 2027-01-18 | 0 | Status tabs show live counts; each row carries its current status mark. | ADM-03 ADM الأدمن والاسكانر 3 Status tabs on the Scanner Approved page إضافة تابات الحالات في صفحة Approved في الاسكانر Show status tabs with counts and a per-influencer status mark on the Scanner Approved page, so field staff can see at a glance how many confirmed, how many actually attended and how many are outstanding. NEW Not Started P1 M 3 W5 W5 · Brand, Platform & Field Operations Frontend Field Execution & Coverage 2027-01-14 2027-01-18 W17 3 [] Status tabs show live counts; each row carries its current status mark. Source asks directly: which exact statuses must be shown here? The tabs cannot be built until the list is fixed. 0 Status tabs show live counts; each row carries its current status mark. Master Register ADM-03 Frontend | workbook-import | 2026-09-21T00:00:00.000Z | 2026-09-21T00:00:00.000Z | PMO-EXCEL-2026-09-13-v1 |
| PMO-XLS-Master Register-BRD-08 | pmo | task | [BRD-08] Brand imports Wishlist from a Sheet file | Let a brand import a Wishlist from a spreadsheet of usernames: matches are added, non-matches are exported to a file for later onboarding — uploading 300 Instagram usernames should not mean typing them in one by one. | pmo-sheet:Backend | Backlog | High | 2027-01-14 | 2027-01-20 | 0 | Import adds matched usernames, exports unmatched ones, and reports both counts. | BRD-08 BRD إدارة البراندات 8 Brand imports Wishlist from a Sheet file البراند يستورد Wishlist عن طريق ملف Sheet Let a brand import a Wishlist from a spreadsheet of usernames: matches are added, non-matches are exported to a file for later onboarding — uploading 300 Instagram usernames should not mean typing them in one by one. NEW Not Started P1 L 5 W5 W5 · Brand, Platform & Field Operations Backend List Building (Wishlist) 2027-01-14 2027-01-20 W17 5 [] Import adds matched usernames, exports unmatched ones, and reports both counts. Source flags that the same username can belong to different people on different platforms, so the import must be platform-scoped — confirm the required format. 0 Import adds matched usernames, exports unmatched ones, and reports both counts. Master Register BRD-08 Backend | workbook-import | 2026-09-21T00:00:00.000Z | 2026-09-21T00:00:00.000Z | PMO-EXCEL-2026-09-13-v1 |
| PMO-XLS-Master Register-ADM-02 | pmo | task | [ADM-02] CREATE and ASSIGN categories in Scanner approvals | Split Scanner approval requests into CREATE (a brand-new influencer built from scratch) and ASSIGN (an existing influencer assigned to a campaign), since the two need different review. | pmo-sheet:Full-stack | Backlog | High | 2027-01-15 | 2027-01-19 | 0 | Requests carry a CREATE or ASSIGN category and can be filtered and reviewed separately. | ADM-02 ADM الأدمن والاسكانر 2 CREATE and ASSIGN categories in Scanner approvals إضافة فئات CREATE و ASSIGN لطلب الموافقة على الاسكانر Split Scanner approval requests into CREATE (a brand-new influencer built from scratch) and ASSIGN (an existing influencer assigned to a campaign), since the two need different review. NEW Not Started P1 M 3 W5 W5 · Brand, Platform & Field Operations Full-stack Field Execution & Coverage 2027-01-15 2027-01-19 W17 3 [] Requests carry a CREATE or ASSIGN category and can be filtered and reviewed separately. 0 Requests carry a CREATE or ASSIGN category and can be filtered and reviewed separately. Master Register ADM-02 Full-stack | workbook-import | 2026-09-21T00:00:00.000Z | 2026-09-21T00:00:00.000Z | PMO-EXCEL-2026-09-13-v1 |
| PMO-XLS-Master Register-ADM-04 | pmo | task | [ADM-04] Scanner logo links to the homepage | Make the Scanner logo clickable through to the homepage, as users expect on any site and read as a broken product when it does nothing. | pmo-sheet:Frontend | Backlog | Medium | 2027-01-19 | 2027-01-19 | 0 | Logo navigates to home from every scanner page. | ADM-04 ADM الأدمن والاسكانر 4 Scanner logo links to the homepage اللوجو في الاسكانر يودّي على الصفحة الرئيسية Make the Scanner logo clickable through to the homepage, as users expect on any site and read as a broken product when it does nothing. NEW Not Started P2 S 1 W5 W5 · Brand, Platform & Field Operations Frontend Field Execution & Coverage 2027-01-19 2027-01-19 W18 1 [] Logo navigates to home from every scanner page. 0 Logo navigates to home from every scanner page. Master Register ADM-04 Frontend | workbook-import | 2026-09-21T00:00:00.000Z | 2026-09-21T00:00:00.000Z | PMO-EXCEL-2026-09-13-v1 |
| PMO-XLS-Master Register-BRD-01 | pmo | task | [BRD-01] Similar brands in the Booking Order sheet | When a brand is entered in the Booking Order sheet, also surface similar brands that have run campaigns in the same category, so prior experience is reused instead of starting from zero. | pmo-sheet:Full-stack | Backlog | High | 2027-01-20 | 2027-01-26 | 0 | Similar brands listed with category and campaign history; selecting one surfaces its proven influencers. | BRD-01 BRD إدارة البراندات 1 Similar brands in the Booking Order sheet إضافة البراندات الشبيهة في شيت الـ Booking Order When a brand is entered in the Booking Order sheet, also surface similar brands that have run campaigns in the same category, so prior experience is reused instead of starting from zero. NEW Not Started P1 L 5 W5 W5 · Brand, Platform & Field Operations Full-stack Campaign Setup & Booking 2027-01-20 2027-01-26 W18 5 ["BRD-02"] Similar brands listed with category and campaign history; selecting one surfaces its proven influencers. 0 Similar brands listed with category and campaign history; selecting one surfaces its proven influencers. Master Register BRD-01 Full-stack | workbook-import | 2026-09-21T00:00:00.000Z | 2026-09-21T00:00:00.000Z | PMO-EXCEL-2026-09-13-v1 |
| PMO-XLS-Master Register-BRD-06 | pmo | task | [BRD-06] Active frame for brands with no history | For brands with no historical data, draw a distinct green frame around Active influencers without showing badge numbers, so staff still know someone is active without exposing other brands' figures. | pmo-sheet:Frontend | Backlog | Medium | 2027-01-20 | 2027-01-20 | 0 | Green frame shown for active influencers; no numeric badge leaks cross-brand data. | BRD-06 BRD إدارة البراندات 6 Active frame for brands with no history إطار مميز للمؤثر النشط للبراندات اللي مالهاش بيانات تاريخ For brands with no historical data, draw a distinct green frame around Active influencers without showing badge numbers, so staff still know someone is active without exposing other brands' figures. NEW Not Started P2 S 1 W5 W5 · Brand, Platform & Field Operations Frontend Content Capture & Best Media 2027-01-20 2027-01-20 W18 1 [] Green frame shown for active influencers; no numeric badge leaks cross-brand data. 0 Green frame shown for active influencers; no numeric badge leaks cross-brand data. Master Register BRD-06 Frontend | workbook-import | 2026-09-21T00:00:00.000Z | 2026-09-21T00:00:00.000Z | PMO-EXCEL-2026-09-13-v1 |
| PMO-XLS-Master Register-INF-12 | pmo | task | [INF-12] Highlight own-brand campaigns on the card | Mark own-brand campaigns on the card with a blue dot and other brands' campaigns with a grey dot, so a brand entitled to see other campaigns can still tell them apart. | pmo-sheet:Frontend | Backlog | Medium | 2027-01-21 | 2027-01-21 | 0 | Blue / grey markers render correctly and respect the viewer's entitlement. | INF-12 INF إدارة المؤثرين 12 Highlight own-brand campaigns on the card تمييز حملات البراند نفسه على كارت المؤثر Mark own-brand campaigns on the card with a blue dot and other brands' campaigns with a grey dot, so a brand entitled to see other campaigns can still tell them apart. NEW Not Started P2 S 1 W5 W5 · Brand, Platform & Field Operations Frontend Content Capture & Best Media 2027-01-21 2027-01-21 W18 1 [] Blue / grey markers render correctly and respect the viewer's entitlement. 0 Blue / grey markers render correctly and respect the viewer's entitlement. Master Register INF-12 Frontend | workbook-import | 2026-09-21T00:00:00.000Z | 2026-09-21T00:00:00.000Z | PMO-EXCEL-2026-09-13-v1 |
| PMO-XLS-Master Register-INF-26 | pmo | task | [INF-26] Filter by gift type and price range | Filter by compensation type (voucher or gift) and by price range, so budget-fit influencers with prior commercials can be found instead of negotiating from zero. | pmo-sheet:Backend | Backlog | High | 2027-01-21 | 2027-01-25 | 0 | Voucher / gift type plus min-max price returns matching influencers with prior deal history. | INF-26 INF إدارة المؤثرين 26 Filter by gift type and price range فلترة حسب نوع الهدية والسعر مع تحديد نطاق Filter by compensation type (voucher or gift) and by price range, so budget-fit influencers with prior commercials can be found instead of negotiating from zero. NEW Not Started P1 M 3 W5 W5 · Brand, Platform & Field Operations Backend Field Execution & Coverage 2027-01-21 2027-01-25 W18 3 [] Voucher / gift type plus min-max price returns matching influencers with prior deal history. 0 Voucher / gift type plus min-max price returns matching influencers with prior deal history. Master Register INF-26 Backend | workbook-import | 2026-09-21T00:00:00.000Z | 2026-09-21T00:00:00.000Z | PMO-EXCEL-2026-09-13-v1 |
| PMO-XLS-Master Register-INF-23 | pmo | task | [INF-23] Active influencers shown first by default | Default the brand influencer page to show Active influencers first, since people we have already worked with are the safest and easiest to coordinate. | pmo-sheet:Frontend | Backlog | Medium | 2027-01-22 | 2027-01-22 | 0 | Default sort places Active first; user can override and the override persists per session. | INF-23 INF إدارة المؤثرين 23 Active influencers shown first by default عرض المؤثرين النشطين الأول افتراضياً Default the brand influencer page to show Active influencers first, since people we have already worked with are the safest and easiest to coordinate. NEW Not Started P2 S 1 W5 W5 · Brand, Platform & Field Operations Frontend Influencer Discovery & Sourcing 2027-01-22 2027-01-22 W18 1 ["INF-14"] Default sort places Active first; user can override and the override persists per session. 0 Default sort places Active first; user can override and the override persists per session. Master Register INF-23 Frontend | workbook-import | 2026-09-21T00:00:00.000Z | 2026-09-21T00:00:00.000Z | PMO-EXCEL-2026-09-13-v1 |
| PMO-XLS-Master Register-PLT-03 | pmo | task | [PLT-03] In-product announcements for new features | Announce new features inside the product through hints, tooltips or a What's New panel, because a feature nobody knows about gets zero usage — e.g. on login, show 'New: you can now export the report to PowerPoint' with an arrow to the button. | pmo-sheet:Frontend | Backlog | Medium | 2027-01-25 | 2027-01-27 | 0 | What's New panel lists recent releases; each item can be dismissed and targeting is by role. | PLT-03 PLT المنصة والصفحة الرئيسية 3 In-product announcements for new features عرض المميزات الجديدة عن طريق Hints أو What's New Announce new features inside the product through hints, tooltips or a What's New panel, because a feature nobody knows about gets zero usage — e.g. on login, show 'New: you can now export the report to PowerPoint' with an arrow to the button. NEW Not Started P2 M 3 W5 W5 · Brand, Platform & Field Operations Frontend Automation, Notifications & Governance 2027-01-25 2027-01-27 W19 3 [] What's New panel lists recent releases; each item can be dismissed and targeting is by role. 0 What's New panel lists recent releases; each item can be dismissed and targeting is by role. Master Register PLT-03 Frontend | workbook-import | 2026-09-21T00:00:00.000Z | 2026-09-21T00:00:00.000Z | PMO-EXCEL-2026-09-13-v1 |
| PMO-XLS-Master Register-BRD-04 | pmo | task | [BRD-04] Standalone Influencer History section | Give the brand a dedicated Influencer History section instead of burying the same list three clicks deep in a filter — this is the most valuable list any brand has. | pmo-sheet:Full-stack | Backlog | High | 2027-01-27 | 2027-01-29 | 0 | One-click Influencer History tab listing everyone who has worked with the brand. | BRD-04 BRD إدارة البراندات 4 Standalone Influencer History section قسم مستقل اسمه Influencer History للبراند Give the brand a dedicated Influencer History section instead of burying the same list three clicks deep in a filter — this is the most valuable list any brand has. NEW Not Started P1 M 3 W5 W5 · Brand, Platform & Field Operations Full-stack Content Capture & Best Media 2027-01-27 2027-01-29 W19 3 [] One-click Influencer History tab listing everyone who has worked with the brand. Source raises an open design question: should this be a single ACTIVE filter showing all history, or split the way Active / Previous Campaigns already is? 0 One-click Influencer History tab listing everyone who has worked with the brand. Master Register BRD-04 Full-stack | workbook-import | 2026-09-21T00:00:00.000Z | 2026-09-21T00:00:00.000Z | PMO-EXCEL-2026-09-13-v1 |
| PMO-XLS-Master Register-BRD-07 | pmo | task | [BRD-07] Gender Target setting for brands | Add a Gender Target setting (Male / Female) to brand settings so filtering is precise from the start and a womenswear brand never sees male influencers. | pmo-sheet:Full-stack | Backlog | High | 2027-02-01 | 2027-02-03 | 0 | Setting saved per brand and applied as a default constraint in influencer selection. | BRD-07 BRD إدارة البراندات 7 Gender Target setting for brands خيار Gender Target في إعدادات البراند Add a Gender Target setting (Male / Female) to brand settings so filtering is precise from the start and a womenswear brand never sees male influencers. NEW Not Started P1 M 3 W5 W5 · Brand, Platform & Field Operations Full-stack Brand Onboarding & Categorisation 2027-02-01 2027-02-03 W20 3 [] Setting saved per brand and applied as a default constraint in influencer selection. 0 Setting saved per brand and applied as a default constraint in influencer selection. Master Register BRD-07 Full-stack | workbook-import | 2026-09-21T00:00:00.000Z | 2026-09-21T00:00:00.000Z | PMO-EXCEL-2026-09-13-v1 |
| PMO-XLS-Master Register-ADM-05 | pmo | task | [ADM-05] Permanent demo campaign in the Scanner | Provide a permanent demo campaign with complete, realistic data (coverages, visits, everything) so new clients can be shown the platform and new staff trained without touching a real client campaign. | pmo-sheet:Full-stack | Backlog | High | 2027-02-08 | 2027-02-10 | 0 | Demo campaign always available with full data and isolated from production reporting. | ADM-05 ADM الأدمن والاسكانر 5 Permanent demo campaign in the Scanner حملة ديمو Demo ثابتة في الاسكانر Provide a permanent demo campaign with complete, realistic data (coverages, visits, everything) so new clients can be shown the platform and new staff trained without touching a real client campaign. NEW Not Started P1 M 3 W6 W6 · Automation, Communication & Hardening Full-stack Automation, Notifications & Governance 2027-02-08 2027-02-10 W21 3 [] Demo campaign always available with full data and isolated from production reporting. Source asks: should the demo be seeded from a real campaign or built from synthetic dummy data? 0 Demo campaign always available with full data and isolated from production reporting. Master Register ADM-05 Full-stack | workbook-import | 2026-09-21T00:00:00.000Z | 2026-09-21T00:00:00.000Z | PMO-EXCEL-2026-09-13-v1 |
| PMO-XLS-Master Register-TEC-01 | pmo | task | [TEC-01] Auto-replace corrupted coverage data | Automatically replace corrupted coverage and report data from the folders the Operations team prepares — a truncated video or broken image must be repaired automatically, because manual repair does not scale across every campaign. | pmo-sheet:DevOps | Backlog | Critical | 2027-02-08 | 2027-02-12 | 0 | Corrupted assets detected and replaced within one hour; every repair logged and alerted. | TEC-01 TEC التقني والأتمتة 1 Auto-replace corrupted coverage data استبدال بيانات التغطية التالفة أوتوماتيك من فولدرات Operations Automatically replace corrupted coverage and report data from the folders the Operations team prepares — a truncated video or broken image must be repaired automatically, because manual repair does not scale across every campaign. NEW Not Started P0 L 5 W6 W6 · Automation, Communication & Hardening DevOps Field Execution & Coverage 2027-02-08 2027-02-12 W21 5 ["TEC-02"] Corrupted assets detected and replaced within one hour; every repair logged and alerted. 0 Corrupted assets detected and replaced within one hour; every repair logged and alerted. Master Register TEC-01 DevOps | workbook-import | 2026-09-21T00:00:00.000Z | 2026-09-21T00:00:00.000Z | PMO-EXCEL-2026-09-13-v1 |
| PMO-XLS-Master Register-TEC-02 | pmo | task | [TEC-02] Reconcile coverage data with Bee Cloud storage | Compare coverage records in the system against Bee Cloud storage and automate the upload/reconciliation, so files are not lost between the two — if the system reports 80 coverages and the cloud holds 92, we are not billing for 12 of them. | pmo-sheet:Data/BI | Backlog | Critical | 2027-02-08 | 2027-02-12 | 0 | Scheduled reconciliation produces an exception report of files present on one side only; gap trends to zero. | TEC-02 TEC التقني والأتمتة 2 Reconcile coverage data with Bee Cloud storage مطابقة بيانات التغطية مع التخزين السحابي Bee Cloud Compare coverage records in the system against Bee Cloud storage and automate the upload/reconciliation, so files are not lost between the two — if the system reports 80 coverages and the cloud holds 92, we are not billing for 12 of them. NEW Not Started P0 L 5 W6 W6 · Automation, Communication & Hardening Data/BI Field Execution & Coverage 2027-02-08 2027-02-12 W21 5 [] Scheduled reconciliation produces an exception report of files present on one side only; gap trends to zero. 0 Scheduled reconciliation produces an exception report of files present on one side only; gap trends to zero. Master Register TEC-02 Data/BI | workbook-import | 2026-09-21T00:00:00.000Z | 2026-09-21T00:00:00.000Z | PMO-EXCEL-2026-09-13-v1 |
| PMO-XLS-Master Register-UNC-01 | pmo | task | [UNC-01] Full product concept and vision | Produce a coherent end-to-end concept and vision for the product as a whole, rather than a collection of scattered features. | pmo-sheet:Product/BA | Blocked | Critical | 2027-02-08 | 2027-02-12 | 0 | A signed-off vision document covering product scope, target users and end-to-end flow. | UNC-01 UNC متطلبات محتاجة تصنيف 1 Full product concept and vision عمل تصوّر أو رؤية كاملة للتطبيق Produce a coherent end-to-end concept and vision for the product as a whole, rather than a collection of scattered features. TBC Blocked - Clarification P0 L 5 W6 W6 · Automation, Communication & Hardening Product/BA Brand Onboarding & Categorisation 2027-02-08 2027-02-12 W21 5 [] A signed-off vision document covering product scope, target users and end-to-end flow. Source contains only a title with no detail. This is an unclassified request and needs scoping before it can be planned or estimated. 0 A signed-off vision document covering product scope, target users and end-to-end flow. Master Register UNC-01 Product/BA | workbook-import | 2026-09-21T00:00:00.000Z | 2026-09-21T00:00:00.000Z | PMO-EXCEL-2026-09-13-v1 |
| PMO-XLS-Master Register-WAT-01 | pmo | task | [WAT-01] Block cross-platform messaging | Prevent sending a message to an influencer from the wrong platform identity — messaging an Elite-registered influencer from a TryGC number must raise a warning and block the send, because the influencer will not recognise the sender and both brands are damaged. | pmo-sheet:Backend | Backlog | Critical | 2027-02-08 | 2027-02-10 | 0 | Mismatched platform sends blocked with an explanatory dialog; legitimately matched sends unaffected. | WAT-01 WAT التواصل عن طريق واتساب 1 Block cross-platform messaging منع إرسال الرسايل بين منصات مختلفة Prevent sending a message to an influencer from the wrong platform identity — messaging an Elite-registered influencer from a TryGC number must raise a warning and block the send, because the influencer will not recognise the sender and both brands are damaged. NEW Not Started P0 M 3 W6 W6 · Automation, Communication & Hardening Backend Automation, Notifications & Governance 2027-02-08 2027-02-10 W21 3 ["WAT-02"] Mismatched platform sends blocked with an explanatory dialog; legitimately matched sends unaffected. 0 Mismatched platform sends blocked with an explanatory dialog; legitimately matched sends unaffected. Master Register WAT-01 Backend | workbook-import | 2026-09-21T00:00:00.000Z | 2026-09-21T00:00:00.000Z | PMO-EXCEL-2026-09-13-v1 |
| PMO-XLS-Master Register-NOT-01 | pmo | task | [NOT-01] Detailed logs in the Disconnect email | Add detailed activity logs to the Disconnect email so that when a connection drops the team can see exactly what was happening beforehand, assess the damage and know where to resume — otherwise it is a useless alarm. | pmo-sheet:Backend | Backlog | High | 2027-02-11 | 2027-02-15 | 0 | Disconnect email includes last-N message counts, reply counts, duplicates, a message sample and first-contact count. | NOT-01 NOT الإشعارات والإيميلات الأوتوماتيك 1 Detailed logs in the Disconnect email إيميل الـ Disconnect بسجلات تفصيلية Add detailed activity logs to the Disconnect email so that when a connection drops the team can see exactly what was happening beforehand, assess the damage and know where to resume — otherwise it is a useless alarm. NEW Not Started P1 M 3 W6 W6 · Automation, Communication & Hardening Backend Automation, Notifications & Governance 2027-02-11 2027-02-15 W21 3 [] Disconnect email includes last-N message counts, reply counts, duplicates, a message sample and first-contact count. 0 Disconnect email includes last-N message counts, reply counts, duplicates, a message sample and first-contact count. Master Register NOT-01 Backend | workbook-import | 2026-09-21T00:00:00.000Z | 2026-09-21T00:00:00.000Z | PMO-EXCEL-2026-09-13-v1 |
| PMO-XLS-Master Register-WAT-02 | pmo | task | [WAT-02] Flag influencers present on another platform (Elite) | Flag influencers and accounts that also exist on another platform, with a filter to list them all at once, so the team knows before acting. | pmo-sheet:Full-stack | Backlog | High | 2027-02-11 | 2027-02-15 | 0 | Cross-platform flag visible on the card and filterable; flag source and refresh date recorded. | WAT-02 WAT التواصل عن طريق واتساب 2 Flag influencers present on another platform (Elite) علامة للمؤثرين الموجودين على منصة تانية Elite Flag influencers and accounts that also exist on another platform, with a filter to list them all at once, so the team knows before acting. NEW Not Started P1 M 3 W6 W6 · Automation, Communication & Hardening Full-stack Automation, Notifications & Governance 2027-02-11 2027-02-15 W21 3 [] Cross-platform flag visible on the card and filterable; flag source and refresh date recorded. 0 Cross-platform flag visible on the card and filterable; flag source and refresh date recorded. Master Register WAT-02 Full-stack | workbook-import | 2026-09-21T00:00:00.000Z | 2026-09-21T00:00:00.000Z | PMO-EXCEL-2026-09-13-v1 |
| PMO-XLS-Master Register-NOT-02 | pmo | task | [NOT-02] End-of-shift summary email per team | Send an end-of-shift summary email per team with completed, outstanding and overdue work, so management sees daily progress without asking and each team catches up tomorrow instead of accumulating backlog. | pmo-sheet:Backend | Backlog | High | 2027-02-16 | 2027-02-18 | 0 | Per-team shift email with completed / pending / overdue counts delivered automatically at shift end. | NOT-02 NOT الإشعارات والإيميلات الأوتوماتيك 2 End-of-shift summary email per team إيميل بعد كل شيفت يلخّص شغل اليوم لكل فريق Send an end-of-shift summary email per team with completed, outstanding and overdue work, so management sees daily progress without asking and each team catches up tomorrow instead of accumulating backlog. NEW Not Started P1 M 3 W6 W6 · Automation, Communication & Hardening Backend Automation, Notifications & Governance 2027-02-16 2027-02-18 W22 3 [] Per-team shift email with completed / pending / overdue counts delivered automatically at shift end. 0 Per-team shift email with completed / pending / overdue counts delivered automatically at shift end. Master Register NOT-02 Backend | workbook-import | 2026-09-21T00:00:00.000Z | 2026-09-21T00:00:00.000Z | PMO-EXCEL-2026-09-13-v1 |
| PMO-XLS-Master Register-NOT-03 | pmo | task | [NOT-03] Alert for messages left unanswered | Send an email and in-app notification for messages that went unanswered on WhatsApp or social, and show how many unanswered messages sit on each number, so no influencer is lost to a forgotten message and workload can be balanced. | pmo-sheet:Backend | Backlog | Medium | 2027-02-19 | 2027-02-23 | 0 | Unanswered messages trigger alerts after the agreed threshold; per-number counts visible on a dashboard. | NOT-03 NOT الإشعارات والإيميلات الأوتوماتيك 3 Alert for messages left unanswered إشعار للرسايل اللي عدّت من غير رد على واتساب Send an email and in-app notification for messages that went unanswered on WhatsApp or social, and show how many unanswered messages sit on each number, so no influencer is lost to a forgotten message and workload can be balanced. NEW Not Started P2 M 3 W6 W6 · Automation, Communication & Hardening Backend Automation, Notifications & Governance 2027-02-19 2027-02-23 W22 3 [] Unanswered messages trigger alerts after the agreed threshold; per-number counts visible on a dashboard. Source asks explicitly: after how long (how many hours or days) should each alert fire? The threshold must be defined per channel. 0 Unanswered messages trigger alerts after the agreed threshold; per-number counts visible on a dashboard. Master Register NOT-03 Backend | workbook-import | 2026-09-21T00:00:00.000Z | 2026-09-21T00:00:00.000Z | PMO-EXCEL-2026-09-13-v1 |
| PMO-XLS-Milestones-M0 | pmo | project | [M0] Programme kick-off & baseline approval | Baseline plan, RACI and wave sequencing signed off by management. | pmo-sheet:Management | Planned | Medium | 2026-09-21 | 2026-09-21 | 0 |  | M0 Programme kick-off & baseline approval W0 2026-09-21 Baseline plan, RACI and wave sequencing signed off by management. Management Not Started 0 Baseline plan, RACI and wave sequencing signed off by management. Milestones M0 Management | workbook-import | 2026-09-21T00:00:00.000Z | 2026-09-21T00:00:00.000Z | PMO-EXCEL-2026-09-13-v1 |
| PMO-XLS-Milestones-M1 | pmo | project | [M1] Scope lock — critical clarifications closed | All P0 clarifications closed: page-size conflict, coverage-metric sign-off, re-add alert scope and the brand category list. Lower-priority clarifications tracked to their own wave gate. | pmo-sheet:Management | Planned | Medium | 2026-09-21 | 2026-10-05 | 0 |  | M1 Scope lock — critical clarifications closed W1 2026-10-05 All P0 clarifications closed: page-size conflict, coverage-metric sign-off, re-add alert scope and the brand category list. Lower-priority clarifications tracked to their own wave gate. Management Not Started 14 All P0 clarifications closed: page-size conflict, coverage-metric sign-off, re-add alert scope and the brand category list. Lower-priority clarifications tracked to their own wave gate. Milestones M1 Management | workbook-import | 2026-09-21T00:00:00.000Z | 2026-09-21T00:00:00.000Z | PMO-EXCEL-2026-09-13-v1 |
| PMO-XLS-Milestones-M2 | pmo | project | [M2] Data foundation complete | Brand categories applied retroactively, city and multi-country logic live, SWARM supported, report metrics governed. | pmo-sheet:Product/BA | Planned | Medium | 2026-09-21 | 2026-10-09 | 0 |  | M2 Data foundation complete W1 2026-10-09 Brand categories applied retroactively, city and multi-country logic live, SWARM supported, report metrics governed. Product/BA Not Started 18 Brand categories applied retroactively, city and multi-country logic live, SWARM supported, report metrics governed. Milestones M2 Product/BA | workbook-import | 2026-09-21T00:00:00.000Z | 2026-09-21T00:00:00.000Z | PMO-EXCEL-2026-09-13-v1 |
| PMO-XLS-Milestones-M3 | pmo | project | [M3] Influencer management core released | Chained filtering, campaign filter with statuses, CONTENT section, pagination and Average Views in production. | pmo-sheet:Product/BA | Planned | Medium | 2026-09-21 | 2026-11-12 | 0 |  | M3 Influencer management core released W2 2026-11-12 Chained filtering, campaign filter with statuses, CONTENT section, pagination and Average Views in production. Product/BA Not Started 52 Chained filtering, campaign filter with statuses, CONTENT section, pagination and Average Views in production. Milestones M3 Product/BA | workbook-import | 2026-09-21T00:00:00.000Z | 2026-09-21T00:00:00.000Z | PMO-EXCEL-2026-09-13-v1 |
| PMO-XLS-Milestones-M4 | pmo | project | [M4] Reporting suite v2 live | Consolidated report, per-campaign charts, Excel and PowerPoint export and templates available to clients. | pmo-sheet:Product/BA | Planned | Medium | 2026-09-21 | 2026-12-22 | 0 |  | M4 Reporting suite v2 live W3 2026-12-22 Consolidated report, per-campaign charts, Excel and PowerPoint export and templates available to clients. Product/BA Not Started 92 Consolidated report, per-campaign charts, Excel and PowerPoint export and templates available to clients. Milestones M4 Product/BA | workbook-import | 2026-09-21T00:00:00.000Z | 2026-09-21T00:00:00.000Z | PMO-EXCEL-2026-09-13-v1 |
| PMO-XLS-Milestones-M5 | pmo | project | [M5] Lists, approval & community workflow live | Wishlist exports, EXCLUDE scope, approval log, reset, export and community-created influencers all shipped. | pmo-sheet:Product/BA | Planned | Medium | 2026-09-21 | 2027-01-14 | 0 |  | M5 Lists, approval & community workflow live W4 2027-01-14 Wishlist exports, EXCLUDE scope, approval log, reset, export and community-created influencers all shipped. Product/BA Not Started 115 Wishlist exports, EXCLUDE scope, approval log, reset, export and community-created influencers all shipped. Milestones M5 Product/BA | workbook-import | 2026-09-21T00:00:00.000Z | 2026-09-21T00:00:00.000Z | PMO-EXCEL-2026-09-13-v1 |
| PMO-XLS-Milestones-M6 | pmo | project | [M6] Brand, platform & field operations live | Brand history, Gender Target, scanner tabs and booking-order brand intelligence in production. | pmo-sheet:Product/BA | Planned | Medium | 2026-09-21 | 2027-02-03 | 0 |  | M6 Brand, platform & field operations live W5 2027-02-03 Brand history, Gender Target, scanner tabs and booking-order brand intelligence in production. Product/BA Not Started 135 Brand history, Gender Target, scanner tabs and booking-order brand intelligence in production. Milestones M6 Product/BA | workbook-import | 2026-09-21T00:00:00.000Z | 2026-09-21T00:00:00.000Z | PMO-EXCEL-2026-09-13-v1 |
| PMO-XLS-Milestones-M7 | pmo | project | [M7] Automation & communication live | Coverage reconciliation, cross-platform messaging guard and shift/alert emails running. | pmo-sheet:Product/BA | Planned | Medium | 2026-09-21 | 2027-02-23 | 0 |  | M7 Automation & communication live W6 2027-02-23 Coverage reconciliation, cross-platform messaging guard and shift/alert emails running. Product/BA Not Started 155 Coverage reconciliation, cross-platform messaging guard and shift/alert emails running. Milestones M7 Product/BA | workbook-import | 2026-09-21T00:00:00.000Z | 2026-09-21T00:00:00.000Z | PMO-EXCEL-2026-09-13-v1 |
| PMO-XLS-Milestones-M8 | pmo | project | [M8] End-to-end UAT sign-off & go-live | Full E2E regression across all nine stages passed; hypercare window opened. | pmo-sheet:Management | Planned | Medium | 2026-09-21 | 2027-03-09 | 0 |  | M8 End-to-end UAT sign-off & go-live W6 2027-03-09 Full E2E regression across all nine stages passed; hypercare window opened. Management Not Started 169 Full E2E regression across all nine stages passed; hypercare window opened. Milestones M8 Management | workbook-import | 2026-09-21T00:00:00.000Z | 2026-09-21T00:00:00.000Z | PMO-EXCEL-2026-09-13-v1 |
| PMO-XLS-Actions Log-ACT-01 | pmo | task | [ACT-01] Baseline plan, wave sequencing and RACI approved by management |  | pmo-sheet:Management | To Do | Critical | 2026-09-21 | 2026-09-28 | 0 |  | ACT-01 Programme Baseline plan, wave sequencing and RACI approved by management Governance Management 2026-09-21 2026-09-28 P0 Open Gate for M0. Actions Log ACT-01 Management | workbook-import | 2026-09-21T00:00:00.000Z | 2026-09-21T00:00:00.000Z | PMO-EXCEL-2026-09-13-v1 |
| PMO-XLS-Actions Log-ACT-02 | pmo | task | [ACT-02] Obtain commercial sign-off to remove Impressions and Reach from client reports |  | pmo-sheet:Management | To Do | Critical | 2026-09-21 | 2026-09-28 | 0 |  | ACT-02 REP-1 Obtain commercial sign-off to remove Impressions and Reach from client reports Decision Management 2026-09-21 2026-09-28 P0 Open Gate for M1. Commercial risk if removed unsanctioned. Actions Log ACT-02 Management | workbook-import | 2026-09-21T00:00:00.000Z | 2026-09-21T00:00:00.000Z | PMO-EXCEL-2026-09-13-v1 |
| PMO-XLS-Actions Log-ACT-03 | pmo | task | [ACT-03] Confirm internal vs client rejection scope and lookback window for the re-add alert |  | pmo-sheet:Product/BA | To Do | Critical | 2026-09-21 | 2026-10-01 | 0 |  | ACT-03 CAMP-5 Confirm internal vs client rejection scope and lookback window for the re-add alert Clarification Product/BA 2026-09-21 2026-10-01 P0 Open Gate for M1; blocks CAMP-5 build. Actions Log ACT-03 Product/BA | workbook-import | 2026-09-21T00:00:00.000Z | 2026-09-21T00:00:00.000Z | PMO-EXCEL-2026-09-13-v1 |
| PMO-XLS-Actions Log-ACT-04 | pmo | task | [ACT-04] Decide page size per screen: 100 influencers vs 50 at brand level |  | pmo-sheet:Management | To Do | Critical | 2026-09-21 | 2026-10-01 | 0 |  | ACT-04 INF-11 / BRD-5 Decide page size per screen: 100 influencers vs 50 at brand level Decision Management 2026-09-21 2026-10-01 P0 Open Gate for M1. Documented conflict in the source document. Actions Log ACT-04 Management | workbook-import | 2026-09-21T00:00:00.000Z | 2026-09-21T00:00:00.000Z | PMO-EXCEL-2026-09-13-v1 |
| PMO-XLS-Actions Log-ACT-05 | pmo | task | [ACT-05] Establish whether TikTok Spark Code API access and usage rights are available |  | pmo-sheet:Product/BA | To Do | High | 2026-09-21 | 2026-11-16 | 0 |  | ACT-05 REP-2 Establish whether TikTok Spark Code API access and usage rights are available Clarification Product/BA 2026-09-21 2026-11-16 P1 Open Needed before W3 report build; descope if no access. Actions Log ACT-05 Product/BA | workbook-import | 2026-09-21T00:00:00.000Z | 2026-09-21T00:00:00.000Z | PMO-EXCEL-2026-09-13-v1 |
| PMO-XLS-Actions Log-ACT-06 | pmo | task | [ACT-06] Agree the internal-rejection taxonomy: stage, team and reason codes |  | pmo-sheet:Product/BA | To Do | Critical | 2026-09-21 | 2026-11-02 | 0 |  | ACT-06 APR-2 Agree the internal-rejection taxonomy: stage, team and reason codes Clarification Product/BA 2026-09-21 2026-11-02 P0 Open Needed before W4 starts; blocks APR-2 and APR-3. Actions Log ACT-06 Product/BA | workbook-import | 2026-09-21T00:00:00.000Z | 2026-09-21T00:00:00.000Z | PMO-EXCEL-2026-09-13-v1 |
| PMO-XLS-Actions Log-ACT-07 | pmo | task | [ACT-07] Scope the full product vision deliverable |  | pmo-sheet:Management | To Do | Critical | 2026-09-21 | 2026-10-19 | 0 |  | ACT-07 Q-11 / UNC-1 Scope the full product vision deliverable Clarification Management 2026-09-21 2026-10-19 P0 Open Unclassified request, currently unestimable. Actions Log ACT-07 Management | workbook-import | 2026-09-21T00:00:00.000Z | 2026-09-21T00:00:00.000Z | PMO-EXCEL-2026-09-13-v1 |
| PMO-XLS-Actions Log-ACT-08 | pmo | task | [ACT-08] Approve the master brand category list and retroactive cleanup plan |  | pmo-sheet:Data/BI | To Do | Critical | 2026-09-21 | 2026-09-28 | 0 |  | ACT-08 BRD-2 Approve the master brand category list and retroactive cleanup plan Decision Data/BI 2026-09-21 2026-09-28 P0 Open Gate for M1. Unblocks BRD-1, REP-17, WSH-2, WSH-6. Actions Log ACT-08 Data/BI | workbook-import | 2026-09-21T00:00:00.000Z | 2026-09-21T00:00:00.000Z | PMO-EXCEL-2026-09-13-v1 |
| PMO-XLS-Actions Log-ACT-09 | pmo | task | [ACT-09] Fix the exact list of statuses for the Scanner Approved tabs |  | pmo-sheet:Ops | To Do | High | 2026-09-21 | 2026-10-26 | 0 |  | ACT-09 ADM-3 Fix the exact list of statuses for the Scanner Approved tabs Clarification Ops 2026-09-21 2026-10-26 P1 Open Blocks ADM-3. Actions Log ACT-09 Ops | workbook-import | 2026-09-21T00:00:00.000Z | 2026-09-21T00:00:00.000Z | PMO-EXCEL-2026-09-13-v1 |
| PMO-XLS-Actions Log-ACT-10 | pmo | task | [ACT-10] Decide demo campaign data approach: real campaign vs synthetic data |  | pmo-sheet:Product/BA | To Do | High | 2026-09-21 | 2026-11-02 | 0 |  | ACT-10 ADM-5 Decide demo campaign data approach: real campaign vs synthetic data Decision Product/BA 2026-09-21 2026-11-02 P1 Open Privacy implications if real data is used. Actions Log ACT-10 Product/BA | workbook-import | 2026-09-21T00:00:00.000Z | 2026-09-21T00:00:00.000Z | PMO-EXCEL-2026-09-13-v1 |
| PMO-XLS-Actions Log-ACT-11 | pmo | task | [ACT-11] Confirm ownership and access model for Bee Cloud reconciliation |  | pmo-sheet:DevOps | To Do | Critical | 2026-09-21 | 2027-01-04 | 0 |  | ACT-11 TEC-2 Confirm ownership and access model for Bee Cloud reconciliation Dependency DevOps 2026-09-21 2027-01-04 P0 Open Revenue leakage risk until reconciled. Actions Log ACT-11 DevOps | workbook-import | 2026-09-21T00:00:00.000Z | 2026-09-21T00:00:00.000Z | PMO-EXCEL-2026-09-13-v1 |
| PMO-XLS-Actions Log-ACT-12 | pmo | task | [ACT-12] Define the Wishlist import template and platform-scoped username rules |  | pmo-sheet:Product/BA | To Do | High | 2026-09-21 | 2027-01-11 | 0 |  | ACT-12 BRD-8 Define the Wishlist import template and platform-scoped username rules Clarification Product/BA 2026-09-21 2027-01-11 P1 Open Blocks BRD-8. Actions Log ACT-12 Product/BA | workbook-import | 2026-09-21T00:00:00.000Z | 2026-09-21T00:00:00.000Z | PMO-EXCEL-2026-09-13-v1 |
| PMO-XLS-Actions Log-ACT-13 | pmo | task | [ACT-13] Decide Influencer History navigation model (single ACTIVE vs split) |  | pmo-sheet:Product/BA | To Do | High | 2026-09-21 | 2027-01-11 | 0 |  | ACT-13 BRD-4 Decide Influencer History navigation model (single ACTIVE vs split) Clarification Product/BA 2026-09-21 2027-01-11 P1 Open Blocks BRD-4. Actions Log ACT-13 Product/BA | workbook-import | 2026-09-21T00:00:00.000Z | 2026-09-21T00:00:00.000Z | PMO-EXCEL-2026-09-13-v1 |
| PMO-XLS-Actions Log-ACT-14 | pmo | task | [ACT-14] Define unanswered-message alert thresholds per channel |  | pmo-sheet:Ops | To Do | Medium | 2026-09-21 | 2027-02-08 | 0 |  | ACT-14 NOT-3 Define unanswered-message alert thresholds per channel Clarification Ops 2026-09-21 2027-02-08 P2 Open Blocks NOT-3. Actions Log ACT-14 Ops | workbook-import | 2026-09-21T00:00:00.000Z | 2026-09-21T00:00:00.000Z | PMO-EXCEL-2026-09-13-v1 |
| PMO-XLS-Actions Log-ACT-15 | pmo | task | [ACT-15] Confirm whether WhatsApp view shows campaign statuses or message statuses |  | pmo-sheet:Product/BA | To Do | High | 2026-09-21 | 2027-02-08 | 0 |  | ACT-15 WAT-3 Confirm whether WhatsApp view shows campaign statuses or message statuses Clarification Product/BA 2026-09-21 2027-02-08 P1 Open Blocks WAT-3 verification. Actions Log ACT-15 Product/BA | workbook-import | 2026-09-21T00:00:00.000Z | 2026-09-21T00:00:00.000Z | PMO-EXCEL-2026-09-13-v1 |
| PMO-XLS-Actions Log-ACT-16 | pmo | task | [ACT-16] Reconcile the Reports module count: header states 22 requirements, 21 are listed |  | pmo-sheet:Product/BA | To Do | High | 2026-09-21 | 2026-10-07 | 0 |  | ACT-16 REP Reconcile the Reports module count: header states 22 requirements, 21 are listed Governance Product/BA 2026-09-21 2026-10-07 P1 Open One requirement may be missing from the source document. Actions Log ACT-16 Product/BA | workbook-import | 2026-09-21T00:00:00.000Z | 2026-09-21T00:00:00.000Z | PMO-EXCEL-2026-09-13-v1 |
| PMO-XLS-Actions Log-ACT-17 | pmo | task | [ACT-17] Set up weekly PMO reporting cadence and owner-level capacity review |  | pmo-sheet:Product/BA | To Do | High | 2026-09-21 | 2026-10-12 | 0 |  | ACT-17 Programme Set up weekly PMO reporting cadence and owner-level capacity review Governance Product/BA 2026-09-21 2026-10-12 P1 Open Keeps the plan honest. Actions Log ACT-17 Product/BA | workbook-import | 2026-09-21T00:00:00.000Z | 2026-09-21T00:00:00.000Z | PMO-EXCEL-2026-09-13-v1 |
| PMO-XLS-Actions Log-ACT-18 | pmo | task | [ACT-18] Run end-to-end UAT across all nine E2E stages and obtain go-live sign-off |  | pmo-sheet:QA | To Do | Critical | 2026-09-21 | 2027-03-08 | 0 |  | ACT-18 Programme Run end-to-end UAT across all nine E2E stages and obtain go-live sign-off Delivery QA 2026-09-21 2027-03-08 P0 Open Gate for M8. Actions Log ACT-18 QA | workbook-import | 2026-09-21T00:00:00.000Z | 2026-09-21T00:00:00.000Z | PMO-EXCEL-2026-09-13-v1 |
| PMO-XLS-Open Questions-Q-01 | pmo | decision | [Q-01] Does 'previously rejected' in the re-add alert mean client rejection only, or internal rejection too — and what lookback window applies? |  | pmo-sheet:Product/BA | Needed | Medium |  | 2026-10-05 | 0 |  | Q-01 CAMP-5 TBC Does 'previously rejected' in the re-add alert mean client rejection only, or internal rejection too — and what lookback window applies? يحدد نطاق التحذير عند إضافة مؤثر مرفوض سابقاً: هل الرفض من العميل فقط أم يشمل الرفض الداخلي، وما المدة الزمنية للرجوع للخلف؟ Defines the data query and the alert trigger logic. Product/BA 2026-10-05 Open Open Questions Q-01 Product/BA | workbook-import | 2026-09-21T00:00:00.000Z | 2026-09-21T00:00:00.000Z | PMO-EXCEL-2026-09-13-v1 |
| PMO-XLS-Open Questions-Q-02 | pmo | decision | [Q-02] Do we have TikTok Spark Code API access and the authorisation to surface that data in client reports? |  | pmo-sheet:Product/BA | Needed | Medium |  | 2026-10-12 | 0 |  | Q-02 REP-2 TBC Do we have TikTok Spark Code API access and the authorisation to surface that data in client reports? هل لدينا صلاحية الوصول لبيانات TikTok Spark Code والتصريح بعرضها في تقارير العملاء؟ Blocks the whole requirement; without access it must be descoped. Product/BA 2026-10-12 Open Open Questions Q-02 Product/BA | workbook-import | 2026-09-21T00:00:00.000Z | 2026-09-21T00:00:00.000Z | PMO-EXCEL-2026-09-13-v1 |
| PMO-XLS-Open Questions-Q-03 | pmo | decision | [Q-03] Page size conflict: INF-11 asks for 100 influencers per page, BRD-5 asks for at least 50 at brand level. Which number applies on which screen? |  | pmo-sheet:Management | Needed | Medium |  | 2026-10-05 | 0 |  | Q-03 INF-11 / BRD-5 CONFLICT Page size conflict: INF-11 asks for 100 influencers per page, BRD-5 asks for at least 50 at brand level. Which number applies on which screen? تعارض في حجم الصفحة: متطلب INF-11 يطلب 100 مؤثر في الصفحة، ومتطلب BRD-5 يطلب 50 على الأقل عند البراند. أي رقم يُطبّق في أي شاشة؟ The source document explicitly asks management to decide; both cannot be delivered as written. Management 2026-10-05 Open Open Questions Q-03 Management | workbook-import | 2026-09-21T00:00:00.000Z | 2026-09-21T00:00:00.000Z | PMO-EXCEL-2026-09-13-v1 |
| PMO-XLS-Open Questions-Q-04 | pmo | decision | [Q-04] At which stage and by which team is an internal rejection recorded? The internal-rejection filter cannot be built without this taxonomy. |  | pmo-sheet:Product/BA | Needed | Medium |  | 2026-10-19 | 0 |  | Q-04 APR-2 TBC At which stage and by which team is an internal rejection recorded? The internal-rejection filter cannot be built without this taxonomy. في أي مرحلة وعن طريق أي فريق يتم تسجيل الرفض الداخلي؟ لا يمكن بناء الفلتر بدون تحديد ذلك. Blocks APR-2, APR-3 and any downstream reporting on rejection reasons. Product/BA 2026-10-19 Open Open Questions Q-04 Product/BA | workbook-import | 2026-09-21T00:00:00.000Z | 2026-09-21T00:00:00.000Z | PMO-EXCEL-2026-09-13-v1 |
| PMO-XLS-Open Questions-Q-05 | pmo | decision | [Q-05] Which exact statuses must appear as tabs on the Scanner Approved page? |  | pmo-sheet:Ops | Needed | Medium |  | 2026-10-26 | 0 |  | Q-05 ADM-3 TBC Which exact statuses must appear as tabs on the Scanner Approved page? ما هي الحالات المطلوب عرضها بالظبط في تابات صفحة Approved في الاسكانر؟ Blocks the status-tab design and the per-row status marks. Ops 2026-10-26 Open Open Questions Q-05 Ops | workbook-import | 2026-09-21T00:00:00.000Z | 2026-09-21T00:00:00.000Z | PMO-EXCEL-2026-09-13-v1 |
| PMO-XLS-Open Questions-Q-06 | pmo | decision | [Q-06] Should the demo campaign be seeded from a real campaign or built from synthetic dummy data? |  | pmo-sheet:Product/BA | Needed | Medium |  | 2026-11-02 | 0 |  | Q-06 ADM-5 TBC Should the demo campaign be seeded from a real campaign or built from synthetic dummy data? هل ناخد بيانات حملة الديمو من حملة حقيقية موجودة أم نعمل بيانات وهمية مخصوصة للديمو؟ Affects data-privacy exposure and build effort. Product/BA 2026-11-02 Open Open Questions Q-06 Product/BA | workbook-import | 2026-09-21T00:00:00.000Z | 2026-09-21T00:00:00.000Z | PMO-EXCEL-2026-09-13-v1 |
| PMO-XLS-Open Questions-Q-07 | pmo | decision | [Q-07] Are the statuses to display in WhatsApp campaign statuses (Confirmed, Visit) or message statuses (Sent / Replied / Not yet replied)? |  | pmo-sheet:Product/BA | Needed | Medium |  | 2027-02-08 | 0 |  | Q-07 WAT-3 TBC Are the statuses to display in WhatsApp campaign statuses (Confirmed, Visit) or message statuses (Sent / Replied / Not yet replied)? هل المقصود عرض حالات المؤثر في الحملة (Confirmed / Visit) أم حالات الرسائل (Sent / Replied / Not yet replied)؟ The source distinguishes these and asks for clarification; wrong choice makes the feature misleading. Product/BA 2027-02-08 Open Open Questions Q-07 Product/BA | workbook-import | 2026-09-21T00:00:00.000Z | 2026-09-21T00:00:00.000Z | PMO-EXCEL-2026-09-13-v1 |
| PMO-XLS-Open Questions-Q-08 | pmo | decision | [Q-08] After how long (how many hours or days) should each unanswered-message alert fire? |  | pmo-sheet:Ops | Needed | Medium |  | 2027-02-08 | 0 |  | Q-08 NOT-3 TBC After how long (how many hours or days) should each unanswered-message alert fire? بعد قد إيه (كام ساعة أو كام يوم) المفروض كل تنبيه يتبعت؟ The alert cannot be implemented without a defined threshold per channel. Ops 2027-02-08 Open Open Questions Q-08 Ops | workbook-import | 2026-09-21T00:00:00.000Z | 2026-09-21T00:00:00.000Z | PMO-EXCEL-2026-09-13-v1 |
| PMO-XLS-Open Questions-Q-09 | pmo | decision | [Q-09] What is the required import file format, and how is the same username on two different platforms disambiguated? |  | pmo-sheet:Product/BA | Needed | Medium |  | 2027-01-11 | 0 |  | Q-09 BRD-8 TBC What is the required import file format, and how is the same username on two different platforms disambiguated? ما هو شكل ملف الاستيراد المطلوب، وكيف نفرّق بين نفس اليوزرنيم على منصتين مختلفتين؟ Same handle can be different people per platform; wrong mapping imports the wrong person. Product/BA 2027-01-11 Open Open Questions Q-09 Product/BA | workbook-import | 2026-09-21T00:00:00.000Z | 2026-09-21T00:00:00.000Z | PMO-EXCEL-2026-09-13-v1 |
| PMO-XLS-Open Questions-Q-10 | pmo | decision | [Q-10] Should Influencer History be one ACTIVE filter showing all history, or split like Active / Previous Campaigns? |  | pmo-sheet:Product/BA | Needed | Medium |  | 2027-01-11 | 0 |  | Q-10 BRD-4 TBC Should Influencer History be one ACTIVE filter showing all history, or split like Active / Previous Campaigns? هل يكون Influencer History فلتر واحد ACTIVE يعرض كل التاريخ، أم يتقسّم زي Active / Previous Campaigns؟ Determines the navigation model for the brand's most valuable list. Product/BA 2027-01-11 Open Open Questions Q-10 Product/BA | workbook-import | 2026-09-21T00:00:00.000Z | 2026-09-21T00:00:00.000Z | PMO-EXCEL-2026-09-13-v1 |
| PMO-XLS-Open Questions-Q-11 | pmo | decision | [Q-11] The 'full product concept and vision' request has a title only. What scope and deliverable is expected? |  | pmo-sheet:Management | Needed | Medium |  | 2026-10-19 | 0 |  | Q-11 UNC-1 TBC The 'full product concept and vision' request has a title only. What scope and deliverable is expected? طلب الرؤية الكاملة للتطبيق مكتوب كعنوان فقط من غير تفاصيل. ما النطاق والمخرج المطلوب؟ Currently unestimable and unclassified. Management 2026-10-19 Open Open Questions Q-11 Management | workbook-import | 2026-09-21T00:00:00.000Z | 2026-09-21T00:00:00.000Z | PMO-EXCEL-2026-09-13-v1 |
| PMO-XLS-Open Questions-Q-12 | pmo | decision | [Q-12] Have commercial and client-facing teams signed off removal of Impressions and Reach from live reports? |  | pmo-sheet:Management | Needed | Medium |  | 2026-10-05 | 0 |  | Q-12 REP-1 TBC Have commercial and client-facing teams signed off removal of Impressions and Reach from live reports? هل تم اعتماد إزالة Impressions و Reach من التقارير من الفرق التجارية والعميل؟ Removing client-visible metrics without sign-off creates commercial risk. Management 2026-10-05 Open Open Questions Q-12 Management | workbook-import | 2026-09-21T00:00:00.000Z | 2026-09-21T00:00:00.000Z | PMO-EXCEL-2026-09-13-v1 |
| PMO-XLS-RAID Log-R-01 | pmo | blocker | [R-01] Brand categories must be applied retroactively across all historical brands before dependent features can work | Brand categories must be applied retroactively across all historical brands before dependent features can work | pmo-sheet:Data/BI | Open | Medium |  |  | 0 | Start BRD-2 in W1 with a dedicated data pass; freeze the category list before cleanup begins. | R-01 Risk Brand categories must be applied retroactively across all historical brands before dependent features can work High Medium High Start BRD-2 in W1 with a dedicated data pass; freeze the category list before cleanup begins. Data/BI Open ["BRD-02"] Data/BI No dates supplied in workbook RAID Log R-01 Data/BI | workbook-import | 2026-09-21T00:00:00.000Z | 2026-09-21T00:00:00.000Z | PMO-EXCEL-2026-09-13-v1 |
| PMO-XLS-RAID Log-R-02 | pmo | blocker | [R-02] 14 clarifications are open at kick-off; unresolved items silently stall whole waves | 14 clarifications are open at kick-off; unresolved items silently stall whole waves | pmo-sheet:Product/BA | Open | Medium |  |  | 0 | Close all clarifications by M1 (week 4); escalate any item still open at that gate to management. | R-02 Risk 14 clarifications are open at kick-off; unresolved items silently stall whole waves High High High Close all clarifications by M1 (week 4); escalate any item still open at that gate to management. Product/BA Open ["Q-01..Q-12"] Product/BA No dates supplied in workbook RAID Log R-02 Product/BA | workbook-import | 2026-09-21T00:00:00.000Z | 2026-09-21T00:00:00.000Z | PMO-EXCEL-2026-09-13-v1 |
| PMO-XLS-RAID Log-R-03 | pmo | blocker | [R-03] Coverage files present in Bee Cloud but not in the system mean unbilled work | Coverage files present in Bee Cloud but not in the system mean unbilled work | pmo-sheet:DevOps | Open | Medium |  |  | 0 | Weekly automated reconciliation with an exception report reviewed by Operations and Finance. | R-03 Risk Coverage files present in Bee Cloud but not in the system mean unbilled work High Medium High Weekly automated reconciliation with an exception report reviewed by Operations and Finance. DevOps Open ["TEC-02"] DevOps No dates supplied in workbook RAID Log R-03 DevOps | workbook-import | 2026-09-21T00:00:00.000Z | 2026-09-21T00:00:00.000Z | PMO-EXCEL-2026-09-13-v1 |
| PMO-XLS-RAID Log-R-04 | pmo | blocker | [R-04] Report metric removal (Impressions / Reach) may be commercially sensitive with existing clients | Report metric removal (Impressions / Reach) may be commercially sensitive with existing clients | pmo-sheet:Management | Open | Medium |  |  | 0 | Secure written commercial sign-off before the change ships; keep the admin toggle ready as a rollback. | R-04 Risk Report metric removal (Impressions / Reach) may be commercially sensitive with existing clients Medium Medium Medium Secure written commercial sign-off before the change ships; keep the admin toggle ready as a rollback. Management Open ["REP-01"] Management No dates supplied in workbook RAID Log R-04 Management | workbook-import | 2026-09-21T00:00:00.000Z | 2026-09-21T00:00:00.000Z | PMO-EXCEL-2026-09-13-v1 |

| id | workspaceId | kind | title | description | ownerId | status | priority | progress | nextAction | details | createdBy | createdAt | updatedAt | sourceId |
| --- | --- | --- | --- | --- | --- | --- | --- | --- | --- | --- | --- | --- | --- | --- |
| PMO-XLS-RAID Log-R-05 | pmo | blocker | [R-05] Retroactive data cleanup on influencer city and country may overwrite deliberately-set values | Retroactive data cleanup on influencer city and country may overwrite deliberately-set values | pmo-sheet:Backend | Open | Medium | 0 | Log every automatic change with before/after values and provide an admin revert. | R-05 Risk Retroactive data cleanup on influencer city and country may overwrite deliberately-set values Medium Medium Medium Log every automatic change with before/after values and provide an admin revert. Backend Open ["INF-09","INF-10"] Backend No dates supplied in workbook RAID Log R-05 Backend | workbook-import | 2026-09-21T00:00:00.000Z | 2026-09-21T00:00:00.000Z | PMO-EXCEL-2026-09-13-v1 |
| PMO-XLS-RAID Log-R-06 | pmo | blocker | [R-06] Large reporting wave concentrates load on a small Data/BI team | Large reporting wave concentrates load on a small Data/BI team | pmo-sheet:Product/BA | Open | Medium | 0 | Balance the waves and consider temporary capacity for W3; monitor effort per owner on the dashboard. | R-06 Risk Large reporting wave concentrates load on a small Data/BI team Medium High Medium Balance the waves and consider temporary capacity for W3; monitor effort per owner on the dashboard. Product/BA Open ["REP-05","REP-08","REP-17"] Product/BA No dates supplied in workbook RAID Log R-06 Product/BA | workbook-import | 2026-09-21T00:00:00.000Z | 2026-09-21T00:00:00.000Z | PMO-EXCEL-2026-09-13-v1 |
| PMO-XLS-RAID Log-R-07 | pmo | blocker | [R-07] Scope creep: the source document is a wish list, not a prioritised backlog | Scope creep: the source document is a wish list, not a prioritised backlog | pmo-sheet:Management | Open | Medium | 0 | Enforce the P0/P1/P2 priorities in this register; any addition requires an equal-value descope. | R-07 Risk Scope creep: the source document is a wish list, not a prioritised backlog High High High Enforce the P0/P1/P2 priorities in this register; any addition requires an equal-value descope. Management Open ["Programme"] Management No dates supplied in workbook RAID Log R-07 Management | workbook-import | 2026-09-21T00:00:00.000Z | 2026-09-21T00:00:00.000Z | PMO-EXCEL-2026-09-13-v1 |
| PMO-XLS-RAID Log-A-01 | pmo | blocker | [A-01] The 17 items marked DONE in the document are functionally complete and need only regression verification | The 17 items marked DONE in the document are functionally complete and need only regression verification | pmo-sheet:QA | Open | Medium | 0 | Verify each DONE item during W0 and re-open any that fail, re-pointing them into the relevant wave. | A-01 Assumption The 17 items marked DONE in the document are functionally complete and need only regression verification Medium Medium Medium Verify each DONE item during W0 and re-open any that fail, re-pointing them into the relevant wave. QA Open ["W0"] QA No dates supplied in workbook RAID Log A-01 QA | workbook-import | 2026-09-21T00:00:00.000Z | 2026-09-21T00:00:00.000Z | PMO-EXCEL-2026-09-13-v1 |
| PMO-XLS-RAID Log-A-02 | pmo | blocker | [A-02] One full-stack squad of roughly nine roles is available throughout the programme | One full-stack squad of roughly nine roles is available throughout the programme | pmo-sheet:Management | Open | Medium | 0 | Confirm capacity at M0; the schedule is capacity-driven and will slip if the squad shrinks. | A-02 Assumption One full-stack squad of roughly nine roles is available throughout the programme High Medium High Confirm capacity at M0; the schedule is capacity-driven and will slip if the squad shrinks. Management Open ["Programme"] Management No dates supplied in workbook RAID Log A-02 Management | workbook-import | 2026-09-21T00:00:00.000Z | 2026-09-21T00:00:00.000Z | PMO-EXCEL-2026-09-13-v1 |
| PMO-XLS-RAID Log-A-03 | pmo | blocker | [A-03] All 74 NEW requirements are in scope for this programme release | All 74 NEW requirements are in scope for this programme release | pmo-sheet:Management | Open | Medium | 0 | Confirm scope at baseline; if the release must shrink, cut by P2 first. | A-03 Assumption All 74 NEW requirements are in scope for this programme release High Low High Confirm scope at baseline; if the release must shrink, cut by P2 first. Management Open ["Programme"] Management No dates supplied in workbook RAID Log A-03 Management | workbook-import | 2026-09-21T00:00:00.000Z | 2026-09-21T00:00:00.000Z | PMO-EXCEL-2026-09-13-v1 |
| PMO-XLS-RAID Log-I-01 | pmo | blocker | [I-01] Page-size conflict (50 vs 100) blocks INF-11 and BRD-5 completion criteria | Page-size conflict (50 vs 100) blocks INF-11 and BRD-5 completion criteria | pmo-sheet:Management | Open | Medium | 0 | Management decision logged as ACT-04; hold pagination sizing until resolved. | I-01 Issue Page-size conflict (50 vs 100) blocks INF-11 and BRD-5 completion criteria Medium High Medium Management decision logged as ACT-04; hold pagination sizing until resolved. Management Open ["INF-11","BRD-05"] Management No dates supplied in workbook RAID Log I-01 Management | workbook-import | 2026-09-21T00:00:00.000Z | 2026-09-21T00:00:00.000Z | PMO-EXCEL-2026-09-13-v1 |
| PMO-XLS-RAID Log-I-02 | pmo | blocker | [I-02] Reports module header claims 22 requirements but only 21 are listed | Reports module header claims 22 requirements but only 21 are listed | pmo-sheet:Product/BA | Open | Medium | 0 | Reconcile the count with the document author; add the missing requirement if one exists. | I-02 Issue Reports module header claims 22 requirements but only 21 are listed Low High Low Reconcile the count with the document author; add the missing requirement if one exists. Product/BA Open ["REP"] Product/BA No dates supplied in workbook RAID Log I-02 Product/BA | workbook-import | 2026-09-21T00:00:00.000Z | 2026-09-21T00:00:00.000Z | PMO-EXCEL-2026-09-13-v1 |
| PMO-XLS-RAID Log-D-01 | pmo | blocker | [D-01] Reporting and Wishlist intelligence depend on brand categories (BRD-2) landing first | Reporting and Wishlist intelligence depend on brand categories (BRD-2) landing first | pmo-sheet:Data/BI | Open | Medium | 0 | BRD-2 scheduled in W1 as a hard predecessor; tracked on the E2E view. | D-01 Dependency Reporting and Wishlist intelligence depend on brand categories (BRD-2) landing first High High High BRD-2 scheduled in W1 as a hard predecessor; tracked on the E2E view. Data/BI Open ["BRD-01","REP-17","WSH-02","WSH-06"] Data/BI No dates supplied in workbook RAID Log D-01 Data/BI | workbook-import | 2026-09-21T00:00:00.000Z | 2026-09-21T00:00:00.000Z | PMO-EXCEL-2026-09-13-v1 |
| PMO-XLS-RAID Log-D-02 | pmo | blocker | [D-02] Approval workflow work depends on the internal-rejection taxonomy decision | Approval workflow work depends on the internal-rejection taxonomy decision | pmo-sheet:Product/BA | Open | Medium | 0 | Close Q-04 before W4 starts; W4 is scheduled to begin after the clarification gate. | D-02 Dependency Approval workflow work depends on the internal-rejection taxonomy decision Medium High Medium Close Q-04 before W4 starts; W4 is scheduled to begin after the clarification gate. Product/BA Open ["APR-02","APR-03"] Product/BA No dates supplied in workbook RAID Log D-02 Product/BA | workbook-import | 2026-09-21T00:00:00.000Z | 2026-09-21T00:00:00.000Z | PMO-EXCEL-2026-09-13-v1 |
| PMO-XLS-RAID Log-D-03 | pmo | blocker | [D-03] Community-created influencers must route through the approval workflow | Community-created influencers must route through the approval workflow | pmo-sheet:Full-stack | Open | Medium | 0 | COM-1 sequenced after APR-1; both in W4. | D-03 Dependency Community-created influencers must route through the approval workflow Medium Low Low COM-1 sequenced after APR-1; both in W4. Full-stack Open ["COM-01","APR-01"] Full-stack No dates supplied in workbook RAID Log D-03 Full-stack | workbook-import | 2026-09-21T00:00:00.000Z | 2026-09-21T00:00:00.000Z | PMO-EXCEL-2026-09-13-v1 |
